# 软件开发

Schedule from MS Project, 2018-09-27 to 2018-12-06, costs in ￥, A marks actual dates.

## Calendars

- 标准: Mon-Fri 08:00-12:00, 13:00-17:00; Sat-Sun off.

## Resources

| Resource | Rate |
| --- | --- |
| 卢彦谚 | 65 |
| 吴潘安 | 65 |
| 吴志祥 | 65 |
| 谢旻珊 | 65 |
| 谢珮爽 | 65 |
| 谢哲威 | 65 |

## Schedule

| ID | WBS | Task | Type | Duration | Start | Finish | Predecessors | Complete | Remaining | Baseline start | Baseline finish | Baseline duration | Total slack | Free slack | Deadline | Resources | Work | Actual work | Cost | Baseline cost | Actual cost |
| --- | --- | --- | --- | --- | --- | --- | --- | --- | --- | --- | --- | --- | --- | --- | --- | --- | --- | --- | --- | --- | --- |
| 1 | 1 | **启动** |  | 15.5d? | 2018-09-27 08:00 A | 2018-10-18 12:00 A |  | 100% |  | 2018-09-26 08:00 | 2018-10-18 12:00 | 16.5d? |  |  |  |  | 12h | 12h | 780 | 780 | 780 |
| 2 | 1.1 | 可行性分析 |  | 0.5d? | 2018-10-08 08:00 A | 2018-10-08 12:00 A |  | 100% |  | 2018-09-26 08:00 | 2018-09-26 12:00 | 0.5d? |  |  |  | 吴志祥 | 4h | 4h | 260 | 260 | 260 |
| 3 | 1.2 | 项目干系人识别 |  | 0.5d? | 2018-09-27 08:00 A | 2018-09-27 12:00 A | 2 | 100% |  | 2018-09-27 08:00 | 2018-09-27 12:00 | 0.5d? |  |  |  | 谢旻珊 | 4h | 4h | 260 | 260 | 260 |
| 4 | 1.3 | 制订项目章程 |  | 0.5d? | 2018-10-18 08:00 A | 2018-10-18 12:00 A | 3 | 100% |  | 2018-10-10 08:00 | 2018-10-11 17:00 | 0.5d? |  |  |  | 谢哲威 | 4h | 4h | 260 | 260 | 260 |
| 5 | 2 | **计划** |  | 3.5d? | 2018-09-27 08:00 A | 2018-10-02 12:00 | 1FS-15d | 55% | 1.58d? | 2018-09-27 08:00 | 2018-10-02 12:00 | 3.5d? | -0.38d | 0d |  |  | 73h | 49h | 4,745 | 3,185 | 3,185 |
| 6 | 2.1 | **项目范围计划** |  | 3.5d | 2018-09-27 08:00 A | 2018-10-02 12:00 | 4FS-15d | 33% | 2.33d | 2018-09-27 08:00 | 2018-10-02 12:00 | 3.5d | -3d | 0d |  |  | 48h | 24h | 3,120 | 1,560 | 1,560 |
| 7 | 2.1.1 | 分析项目范围、目标描述 |  | 4h | 2018-09-27 08:00 A | 2018-09-27 12:00 A |  | 100% |  | 2018-09-27 08:00 | 2018-09-27 12:00 | 4h |  |  | 2018-09-27 17:00 | 吴志祥; 谢旻珊; 谢哲威 | 12h | 12h | 780 | 780 | 780 |
| 8 | 2.1.2 | 定义预备资源 |  | 0.5d | 2018-09-27 08:00 A | 2018-09-27 12:00 A | 7 | 100% |  | 2018-09-28 08:00 | 2018-09-28 17:00 | 0.5d |  |  |  | 谢旻珊; 谢哲威 | 8h | 8h | 520 | 520 | 520 |
| 9 | 2.1.3 | 获得核心资源 |  | 0.5d | 2018-09-27 08:00 A | 2018-09-27 12:00 A | 8 | 100% |  | 2018-09-28 08:00 | 2018-09-28 17:00 | 0.5d |  |  |  | 谢哲威 | 4h | 4h | 260 | 260 | 260 |
| 10 | 2.1.4 | 确定项目范围规划 | milestone | 3d | 2018-09-27 13:00 | 2018-10-02 12:00 | 9 |  |  | 2018-09-27 13:00 | 2018-10-02 12:00 | 3d | -3.5d | 0d |  | 吴志祥 | 24h |  | 1,560 |  |  |
| 11 | 2.2 | 工作分解结构（WBS） | manual | 1d? | 2018-09-28 08:00 A | 2018-09-28 17:00 A | 10 | 100% |  | 2018-09-30 08:00 | 2018-09-30 17:00 | 1d? |  |  |  | 谢哲威 | 8h | 8h | 520 | 520 | 520 |
| 12 | 2.3 | **项目时间表计划** |  | 1d? | 2018-09-28 08:00 A | 2018-09-30 12:00 A | 6 | 100% |  | 2018-09-28 08:00 | 2018-09-30 12:00 | 1d? |  |  |  | 谢哲威 | 16h | 16h | 1,040 | 1,040 | 1,040 |
| 13 | 2.3.1 | 活动资源估算 |  | 2h? | 2018-09-28 08:00 A | 2018-09-28 10:00 A |  | 100% |  | 2018-10-04 08:00 | 2018-10-04 17:00 | 2h? |  |  |  | 谢哲威 | 2h | 2h | 130 | 130 | 130 |
| 14 | 2.3.2 | 活动工期估算 | manual | 0.25d? | 2018-09-29 08:00 A | 2018-09-29 10:00 A | 13FF | 100% |  | 2018-10-04 08:00 | 2018-10-04 17:00 | 0.25d? |  |  |  | 谢哲威 | 2h | 2h | 130 | 130 | 130 |
| 15 | 2.3.3 | 制订进度计划 | manual | 0.5d? | 2018-09-30 08:00 A | 2018-09-30 12:00 A | 14 | 100% |  | 2018-10-04 08:00 | 2018-10-05 17:00 | 0.5d? |  |  |  | 谢哲威 | 4h | 4h | 260 | 260 | 260 |
| 16 | 2.4 | 项目成本计划 |  | 0.12d? | 2018-10-02 08:00 A | 2018-10-02 09:00 A | 12FF | 100% |  | 2018-10-04 08:00 | 2018-10-05 17:00 | 0.12d? |  |  |  | 谢哲威 | 1h | 1h | 65 | 65 | 65 |
| 17 | 3 | **执行** |  | 48d? | 2018-09-27 08:00 A | 2018-12-03 17:00 | 5 | 42% | 28.02d? | 2018-09-27 08:00 | 2018-11-30 16:13 | 46.9d? | 0d |  |  |  | 1512h | 447.06h | 98,280 | 102,934 | 29,058.9 |
| 18 | 3.1 | **需求分析调研** |  | 15.5d? | 2018-09-27 08:00 A | 2018-10-18 12:00 | 16 | 99% | 0d? | 2018-09-27 08:00 | 2018-10-16 17:00 | 14d? | 0d |  |  |  | 176h | 176h | 11,440 | 23,140 | 11,440 |
| 19 | 3.1.1 | 行为需求分析 |  | 1d | 2018-09-27 08:00 A | 2018-09-27 17:00 A |  | 100% |  | 2018-09-27 08:00 | 2018-09-30 17:00 | 1d |  |  |  | 谢哲威; 卢彦谚; 吴潘安; 吴志祥; 谢旻珊; 谢珮爽 | 48h | 48h | 3,120 | 3,120 | 3,120 |
| 20 | 3.1.2 | **起草初步的需求文档** |  | 4d? | 2018-09-28 08:00 A | 2018-10-03 17:00 A | 19 | 100% |  | 2018-09-28 08:00 | 2018-10-03 17:00 | 4d? |  |  |  |  | 36h | 36h | 2,340 | 14,820 | 2,340 |
| 21 | 3.1.2.1 | 在线编译功能分析 |  | 0.5d? | 2018-09-28 08:00 A | 2018-09-28 12:00 A |  | 100% |  | 2018-09-28 08:00 | 2018-10-05 17:00 | 0.5d? |  |  |  | 谢旻珊 | 4h | 4h | 260 | 260 | 260 |
| 22 | 3.1.2.2 | 每日学习时长功能分析 | manual | 1d? | 2018-09-30 08:00 A | 2018-09-30 17:00 A | 21SS | 100% |  | 2018-09-28 08:00 | 2018-10-05 17:00 | 1d? |  |  |  | 谢珮爽 | 8h | 8h | 520 | 520 | 520 |
| 23 | 3.1.2.3 | 实例展示功能分析 |  | 1d? | 2018-10-01 08:00 A | 2018-10-01 17:00 A | 21SS | 100% |  | 2018-09-28 08:00 | 2018-10-05 17:00 | 1d? |  |  |  | 卢彦谚 | 8h | 8h | 520 | 520 | 520 |
| 24 | 3.1.2.4 | 留言板功能分析 |  | 1d? | 2018-10-03 08:00 A | 2018-10-03 17:00 A | 21SS | 100% |  | 2018-09-28 08:00 | 2018-10-05 17:00 | 1d? |  |  |  | 吴志祥 | 8h | 8h | 520 | 520 | 520 |
| 25 | 3.1.2.5 | 课程选择功能分析 |  | 1d? | 2018-10-03 08:00 A | 2018-10-03 17:00 A | 21SS | 100% |  | 2018-09-28 08:00 | 2018-10-05 17:00 | 1d? |  |  |  | 吴潘安 | 8h | 8h | 520 | 520 | 520 |
| 26 | 3.1.3 | 功能性需求确认 | milestone | 1d? | 2018-10-04 08:00 A | 2018-10-04 17:00 A | 20 | 100% |  | 2018-09-28 08:00 | 2018-10-05 17:00 | 1d? |  |  |  |  |  |  |  |  |  |

| ID | WBS | Task | Type | Duration | Start | Finish | Predecessors | Complete | Remaining | Baseline start | Baseline finish | Baseline duration | Total slack | Free slack | Constraint | Resources | Work | Actual work | Cost | Baseline cost | Actual cost |
| --- | --- | --- | --- | --- | --- | --- | --- | --- | --- | --- | --- | --- | --- | --- | --- | --- | --- | --- | --- | --- | --- |
| 27 | 3.1.4 | **原型开发** |  | 9d? | 2018-09-28 08:00 A | 2018-10-10 17:00 A | 26 | 100% |  | 2018-09-30 08:00 | 2018-10-05 17:00 | 5d? |  |  |  |  | 56h | 56h | 3,640 | 2,600 | 3,640 |
| 28 | 3.1.4.1 | 实例展示原型设计 | manual | 1d? | 2018-09-30 08:00 A | 2018-09-30 17:00 A |  | 100% |  | 2018-10-02 08:00 | 2018-10-07 17:00 | 1d? |  |  |  | 卢彦谚 | 8h | 8h | 520 | 520 | 520 |
| 29 | 3.1.4.2 | 课程内容原型设计 | manual | 1d | 2018-09-30 08:00 A | 2018-09-30 17:00 A | 28SS | 100% |  | 2018-10-02 08:00 | 2018-10-07 17:00 | 1d |  |  |  | 谢旻珊 | 8h | 8h | 520 | 520 | 520 |
| 30 | 3.1.4.3 | 在线编译原型设计 |  | 1d | 2018-09-28 08:00 A | 2018-09-28 17:00 A | 29 | 100% |  | 2018-10-02 08:00 | 2018-10-07 17:00 | 1d |  |  |  | 谢旻珊 | 8h | 8h | 520 | 520 | 520 |
| 31 | 3.1.4.4 | 个人中心原型设计 | manual | 2d | 2018-10-05 08:00 A | 2018-10-07 17:00 A | 28SS | 100% |  | 2018-10-02 08:00 | 2018-10-07 17:00 | 1d? |  |  |  | 谢珮爽 | 16h | 16h | 1,040 | 520 | 1,040 |
| 32 | 3.1.4.5 | 主页原型设计 |  | 2d? | 2018-10-09 08:00 A | 2018-10-10 17:00 A | 28SS | 100% |  | 2018-10-02 08:00 | 2018-10-07 17:00 | 1d? |  |  |  | 谢哲威 | 16h | 16h | 1,040 | 520 | 1,040 |
| 33 | 3.1.5 | 非功能性需求分析 | manual | 1d | 2018-10-14 08:00 A | 2018-10-14 17:00 A | 27 | 100% |  | 2018-10-08 08:00 | 2018-10-08 17:00 | 1d? |  |  |  | 谢珮爽 | 8h | 8h | 520 | 520 | 520 |
| 34 | 3.1.6 | 审阅需求文档 |  | 4h? | 2018-10-15 08:00 A | 2018-10-15 12:00 A | 26, 33 | 100% |  | 2018-10-09 08:00 | 2018-10-09 17:00 | 1d? |  |  |  | 谢哲威 | 4h | 4h | 260 | 520 | 260 |
| 35 | 3.1.7 | 根据反馈修改需求文档 |  | 2d | 2018-10-15 08:00 A | 2018-10-16 17:00 A | 34SS | 100% |  | 2018-10-09 08:00 | 2018-10-10 17:00 | 2d |  |  |  | 谢珮爽 | 16h | 16h | 1,040 | 1,040 | 1,040 |
| 36 | 3.1.8 | 确定交付期限 |  | 0.5d | 2018-10-16 08:00 A | 2018-10-16 17:00 A | 35 | 100% |  | 2018-10-16 13:00 | 2018-10-16 17:00 | 0.5d |  |  | finish no earlier than 2018-10-16 17:00 | 谢哲威 | 4h | 4h | 260 | 260 | 260 |
| 37 | 3.1.9 | 获得所需资源 |  | 0.5d | 2018-10-18 08:00 A | 2018-10-18 12:00 A | 35 | 100% |  | 2018-10-11 08:00 | 2018-10-11 12:00 | 0.5d |  |  |  | 谢旻珊 | 4h | 4h | 260 | 260 | 260 |
| 38 | 3.1.10 | 需求分析完成 | milestone | 0d | 2018-10-18 12:00 | 2018-10-18 12:00 | 37 |  |  | 2018-10-11 12:00 | 2018-10-11 12:00 | 0d | -4.5d | 0d |  |  |  |  |  |  |  |
| 39 | 3.2 | **设计** |  | 16d? | 2018-10-19 08:00 A | 2018-11-09 17:00 | 18FS+1d | 88% | 1.89d? | 2018-10-18 08:00 | 2018-11-06 17:00 | 14d? | 16d |  |  |  | 215h | 209.4h | 13,975 | 12,714 | 13,611 |
| 40 | 3.2.1 | **概要设计** |  | 7d? | 2018-10-19 08:00 A | 2018-10-29 17:00 | 38FS+1d | 94% | 0.41d? | 2018-10-18 08:00 | 2018-10-26 17:00 | 7d? | -1d | 0d |  |  | 111h | 111h | 7,215 | 6,240 | 7,215 |
| 41 | 3.2.1.1 | **系统结构设计** |  | 0.5d? | 2018-10-21 08:00 A | 2018-10-22 12:00 A | 38 | 100% |  | 2018-10-18 08:00 | 2018-10-18 17:00 | 1d? |  |  |  |  | 8h | 8h | 520 | 1,040 | 520 |
| 42 | 3.2.1.1.1 | 系统逻辑架构设计 | manual | 4h? | 2018-10-21 08:00 A | 2018-10-21 12:00 A |  | 100% |  | 2018-10-18 08:00 | 2018-10-18 17:00 | 1d? |  |  |  | 吴潘安 | 4h | 4h | 260 | 520 | 260 |
| 43 | 3.2.1.1.2 | 系统物理架构设计 |  | 4h? | 2018-10-22 08:00 A | 2018-10-22 12:00 A | 42SS | 100% |  | 2018-10-18 08:00 | 2018-10-18 17:00 | 1d? |  |  |  | 吴志祥 | 4h | 4h | 260 | 520 | 260 |
| 44 | 3.2.1.2 | **系统数据模型** |  | 3d? | 2018-10-21 08:00 A | 2018-10-24 17:00 A | 41SS | 100% |  | 2018-10-18 08:00 | 2018-10-23 12:00 | 3.5d? |  |  |  |  | 72h | 72h | 4,680 | 3,120 | 4,680 |
| 45 | 3.2.1.2.1 | E-R模型设计 |  | 1d? | 2018-10-22 08:00 A | 2018-10-22 17:00 A |  | 100% |  | 2018-10-18 08:00 | 2018-10-18 12:00 | 0.5d? |  |  |  | 卢彦谚 | 8h | 8h | 520 | 260 | 520 |
| 46 | 3.2.1.2.2 | 数据字典 |  | 1d? | 2018-10-23 08:00 A | 2018-10-23 17:00 A | 45 | 100% |  | 2018-10-18 13:00 | 2018-10-18 17:00 | 0.5d? |  |  |  | 卢彦谚 | 8h | 8h | 520 | 260 | 520 |
| 47 | 3.2.1.2.3 | 数据库设计 |  | 1d? | 2018-10-23 08:00 A | 2018-10-23 17:00 A | 46 | 100% |  | 2018-10-19 08:00 | 2018-10-19 17:00 | 1d? |  |  |  | 吴志祥 | 8h | 8h | 520 | 520 | 520 |
| 48 | 3.2.1.2.4 | 系统接口设计 | manual | 1d | 2018-10-21 08:00 A | 2018-10-21 17:00 A | 45 | 100% |  | 2018-10-18 13:00 | 2018-10-18 17:00 | 0.5d? |  |  |  | 吴潘安 | 8h | 8h | 520 | 260 | 520 |
| 49 | 3.2.1.2.5 | 完善原型 | manual | 4d | 2018-10-21 08:00 A | 2018-10-24 17:00 A | 18 | 100% |  | 2018-10-18 08:00 | 2018-10-22 17:00 | 3d |  |  |  | 谢哲威 | 32h | 32h | 2,080 | 1,560 | 2,080 |
| 50 | 3.2.1.2.6 | 用户界面设计 |  | 1d? | 2018-10-23 08:00 A | 2018-10-23 17:00 A | 49 | 100% |  | 2018-10-23 08:00 | 2018-10-23 12:00 | 0.5d? |  |  |  | 谢哲威 | 8h | 8h | 520 | 260 | 520 |

| ID | WBS | Task | Type | Duration | Start | Finish | Predecessors | Complete | Remaining | Baseline start | Baseline finish | Baseline duration | Total slack | Free slack | Resources | Work | Actual work | Cost | Baseline cost | Actual cost |
| --- | --- | --- | --- | --- | --- | --- | --- | --- | --- | --- | --- | --- | --- | --- | --- | --- | --- | --- | --- | --- |
| 51 | 3.2.1.3 | **非功能性设计** |  | 2.12d? | 2018-10-19 08:00 A | 2018-10-23 09:00 A | 44, 41 | 100% |  | 2018-10-23 13:00 | 2018-10-24 17:00 | 1.5d? |  |  |  | 19h | 19h | 1,235 | 1,300 | 1,235 |
| 52 | 3.2.1.3.1 | 性能设计 |  | 0.12d | 2018-10-23 08:00 A | 2018-10-23 09:00 A |  | 100% |  | 2018-10-23 13:00 | 2018-10-23 17:00 | 0.5d |  |  | 吴志祥 | 1h | 1h | 65 | 260 | 65 |
| 53 | 3.2.1.3.2 | 可靠性设计 |  | 0.12d? | 2018-10-23 08:00 A | 2018-10-23 09:00 A | 52 | 100% |  | 2018-10-24 08:00 | 2018-10-24 12:00 | 0.5d? |  |  | 吴志祥 | 1h | 1h | 65 | 260 | 65 |
| 54 | 3.2.1.3.3 | 可用性设计 |  | 0.12d? | 2018-10-23 08:00 A | 2018-10-23 09:00 A | 53 | 100% |  | 2018-10-24 13:00 | 2018-10-24 17:00 | 0.5d? |  |  | 吴志祥 | 1h | 1h | 65 | 260 | 65 |
| 55 | 3.2.1.3.4 | 安全性设计 |  | 1d | 2018-10-19 08:00 A | 2018-10-19 17:00 A | 52SS | 100% |  | 2018-10-23 13:00 | 2018-10-23 17:00 | 0.5d? |  |  | 吴潘安 | 8h | 8h | 520 | 260 | 520 |
| 56 | 3.2.1.3.5 | 数据保密设计 |  | 1d | 2018-10-19 08:00 A | 2018-10-19 17:00 A | 55 | 100% |  | 2018-10-24 08:00 | 2018-10-24 12:00 | 0.5d? |  |  | 吴潘安 | 8h | 8h | 520 | 260 | 520 |
| 57 | 3.2.1.4 | 约束和假定 |  | 1d? | 2018-10-22 08:00 A | 2018-10-22 17:00 A | 51SS | 100% |  | 2018-10-23 13:00 | 2018-10-23 17:00 | 0.5d? |  |  | 谢哲威 | 8h | 8h | 520 | 260 | 520 |
| 58 | 3.2.1.5 | 审阅概要设计 |  | 0.5d | 2018-10-25 08:00 A | 2018-10-25 12:00 A | 41, 44, 51, 57 | 100% |  | 2018-10-25 08:00 | 2018-10-25 17:00 | 1d |  |  | 谢哲威 | 4h | 4h | 260 | 520 | 260 |
| 59 | 3.2.1.6 | 根据反馈修改概要设计 |  | 2d? | 2018-10-25 08:00 A | 2018-10-26 17:00 A | 58SS | 100% |  | 2018-10-25 08:00 | 2018-10-25 17:00 | 1d? |  |  |  |  |  |  |  |  |
| 60 | 3.2.1.7 | 概要设计完成 | milestone | 1d? | 2018-10-29 08:00 | 2018-10-29 17:00 | 59 |  |  | 2018-10-26 08:00 | 2018-10-26 17:00 | 1d? | -6d | 0d |  |  |  |  |  |  |
| 61 | 3.2.2 | **详细设计** |  | 15d? | 2018-10-20 08:00 A | 2018-11-09 17:00 | 60 | 81% | 2.79d? | 2018-10-29 08:00 | 2018-11-06 17:00 | 7d? | 16d |  |  | 104h | 98.4h | 6,760 | 6,474 | 6,396 |
| 62 | 3.2.2.1 | 制定功能规范 |  | 0.5d | 2018-10-30 08:00 | 2018-10-30 12:00 |  |  |  | 2018-10-29 08:00 | 2018-10-29 12:00 | 0.5d | 24d | 0d | 谢哲威 | 4h |  | 260 | 260 |  |
| 63 | 3.2.2.2 | 审阅功能规范 |  | 0.5d? | 2018-10-30 13:00 | 2018-10-30 17:00 | 62 |  |  | 2018-10-29 13:00 | 2018-10-29 17:00 | 0.5d? | 24d | 0d |  |  |  |  |  |  |
| 64 | 3.2.2.3 | 根据反馈修改功能规范 |  | 0.5d? | 2018-10-30 13:00 | 2018-10-30 17:00 | 63SS |  |  | 2018-10-29 13:00 | 2018-10-29 17:00 | 0.5d? | 24d |  |  |  |  |  |  |  |
| 65 | 3.2.2.4 | 制定系统编程规范约定 | manual | 1d | 2018-10-20 08:00 A | 2018-10-20 17:00 A | 64 | 100% |  | 2018-10-30 08:00 | 2018-10-30 12:00 | 0.5d? |  |  | 谢哲威 | 8h | 8h | 520 | 260 | 520 |
| 66 | 3.2.2.5 | 审阅编程规范 | manual | 1d | 2018-10-20 08:00 A | 2018-10-20 17:00 A | 65 | 100% |  | 2018-10-30 13:00 | 2018-10-30 17:00 | 0.5d? |  |  |  |  |  |  |  |  |
| 67 | 3.2.2.6 | 根据反馈修改编程规范 | manual | 1d | 2018-10-20 08:00 A | 2018-10-20 17:00 A | 66SS | 100% |  | 2018-10-30 13:00 | 2018-10-30 17:00 | 0.5d? |  |  |  |  |  |  |  |  |
| 68 | 3.2.2.7 | **系统复用计划** |  | 0.5d | 2018-11-06 08:00 A | 2018-11-06 12:00 A |  | 100% |  | 2018-11-04 08:00 | 2018-11-04 17:00 | 0d? |  |  |  | 8h | 8h | 520 | 1,040 | 520 |
| 69 | 3.2.2.7.1 | 前端复用计划 |  | 0.5d | 2018-11-06 08:00 A | 2018-11-06 12:00 A |  | 100% |  | 2018-11-04 08:00 | 2018-11-04 17:00 | 1d |  |  | 谢旻珊 | 4h | 4h | 260 | 520 | 260 |
| 70 | 3.2.2.7.2 | 后台复用计划 |  | 0.5d | 2018-11-06 08:00 A | 2018-11-06 12:00 A | 69SS | 100% |  | 2018-11-04 08:00 | 2018-11-04 17:00 | 1d |  |  | 吴潘安 | 4h | 4h | 260 | 520 | 260 |
| 71 | 3.2.2.8 | **系统接口设计** |  | 1d? | 2018-11-04 08:00 A | 2018-11-05 17:00 A |  | 100% |  | 2018-10-29 08:00 | 2018-10-29 17:00 | 1d? |  |  |  | 16h | 16h | 1,040 | 598 | 1,040 |
| 72 | 3.2.2.8.1 | 内部接口详细设计 | manual | 1d | 2018-11-04 08:00 A | 2018-11-04 17:00 A |  | 100% |  | 2018-10-29 08:00 | 2018-10-29 12:00 | 0.5d? |  |  | 吴潘安 | 8h | 8h | 520 | 260 | 520 |
| 73 | 3.2.2.8.2 | 外部接口详细设计 | manual | 1d | 2018-11-05 08:00 A | 2018-11-05 17:00 A | 72 | 100% |  | 2018-10-29 13:00 | 2018-10-29 17:00 | 0.5d? |  |  | 吴潘安 | 8h | 8h | 520 | 260 | 520 |
| 74 | 3.2.2.9 | **对象模型设计** |  | 3d? | 2018-10-31 08:00 A | 2018-11-03 17:00 A |  | 100% |  | 2018-10-29 08:00 | 2018-10-30 17:00 | 2d? |  |  |  | 16h | 16h | 1,040 | 1,196 | 1,040 |
| 75 | 3.2.2.9.1 | 对象模型图（类图） |  | 1d? | 2018-10-31 08:00 A | 2018-10-31 17:00 A |  | 100% |  | 2018-10-29 08:00 | 2018-10-29 17:00 | 1d? |  |  | 卢彦谚 | 8h | 8h | 520 | 520 | 520 |
| 76 | 3.2.2.9.2 | 对象描述 | manual | 1d | 2018-11-03 08:00 A | 2018-11-03 17:00 A | 75 | 100% |  | 2018-10-30 08:00 | 2018-10-30 17:00 | 1d? |  |  | 谢旻珊 | 8h | 8h | 520 | 520 | 520 |

| ID | WBS | Task | Type | Duration | Start | Finish | Predecessors | Complete | Remaining | Baseline start | Baseline finish | Baseline duration | Total slack | Free slack | Resources | Work | Actual work | Cost | Baseline cost | Actual cost |
| --- | --- | --- | --- | --- | --- | --- | --- | --- | --- | --- | --- | --- | --- | --- | --- | --- | --- | --- | --- | --- |
| 77 | 3.2.2.10 | **用例详细设计** |  | 1.5d? | 2018-11-04 08:00 A | 2018-11-06 12:00 A | 76 | 100% |  | 2018-10-31 08:00 | 2018-10-31 17:00 | 1d? |  |  |  | 40h | 40h | 2,600 | 2,080 | 2,600 |
| 78 | 3.2.2.10.1 | 系统顺序图设计 |  | 2d | 2018-11-04 08:00 A | 2018-11-05 17:00 A |  | 100% |  | 2018-10-31 08:00 | 2018-10-31 17:00 | 1d? |  |  | 卢彦谚; 谢旻珊 | 32h | 32h | 2,080 | 1,040 | 2,080 |
| 79 | 3.2.2.10.2 | 系统状态图设计 |  | 0.5d? | 2018-11-06 08:00 A | 2018-11-06 12:00 A |  | 100% |  | 2018-10-31 08:00 | 2018-10-31 17:00 | 1d? |  |  | 吴志祥; 谢珮爽 | 8h | 8h | 520 | 1,040 | 520 |
| 80 | 3.2.2.11 | 审阅详细设计 |  | 0.5d | 2018-11-08 08:00 A | 2018-11-08 12:00 A | 68, 48, 74, 77 | 100% |  | 2018-11-05 08:00 | 2018-11-05 17:00 | 1d |  |  | 谢哲威 | 4h | 4h | 260 | 520 | 260 |
| 81 | 3.2.2.12 | 根据反馈修改详细设计 |  | 1d? | 2018-11-08 08:00 A | 2018-11-08 17:00 | 80SS | 80% | 0.2d? | 2018-11-05 08:00 | 2018-11-05 17:00 | 1d? | 16d | 0d | 谢珮爽 | 8h | 6.4h | 520 | 520 | 416 |
| 82 | 3.2.2.13 | 详细设计完成 | milestone | 1d? | 2018-11-09 08:00 | 2018-11-09 17:00 | 81 |  |  | 2018-11-06 08:00 | 2018-11-06 17:00 | 1d? | 16d | 0d |  |  |  |  |  |  |
| 83 | 3.2.3 | 设计工作完成 | milestone | 0d | 2018-11-09 17:00 | 2018-11-09 17:00 | 82 |  |  | 2018-11-06 17:00 | 2018-11-06 17:00 | 0d | 16d |  |  |  |  |  |  |  |
| 84 | 3.3 | **开发** |  | 21d? | 2018-10-16 08:00 A | 2018-11-13 17:00 | 18FS+2d | 16% | 17.67d? | 2018-10-19 08:00 | 2018-11-12 16:13 | 16.9d? | 0d |  |  | 621h | 61.66h | 40,365 | 34,580 | 4,007.9 |
| 85 | 3.3.1 | 审阅需求文档 |  | 1d | 2018-10-16 08:00 A | 2018-10-16 17:00 A | 38FS+2d | 100% |  | 2018-10-19 08:00 | 2018-10-19 12:00 | 0.5d |  |  | 吴潘安 | 8h | 8h | 520 | 260 | 520 |
| 86 | 3.3.2 | 制定开发计划 |  | 1d? | 2018-10-17 08:00 A | 2018-10-17 17:00 A | 85 | 100% |  | 2018-10-19 13:00 | 2018-10-22 12:00 | 1d? |  |  | 吴潘安 | 8h | 8h | 520 | 520 | 520 |
| 87 | 3.3.3 | 分派任务给开发人员 |  | 0.12d | 2018-10-18 08:00 A | 2018-10-18 13:13 A | 86 | 100% |  | 2018-10-22 13:00 | 2018-10-23 16:13 | 1d |  |  | 吴潘安 | 1h | 1h | 65 | 520 | 65 |
| 88 | 3.3.4 | **知识学习** |  | 5d | 2018-10-22 13:00 | 2018-10-29 12:00 | 87 |  |  | 2018-10-23 16:13 | 2018-10-30 16:13 | 5d | 11.5d |  |  | 152h |  | 9,880 | 9,880 |  |
| 89 | 3.3.4.1 | 前端知识学习 |  | 3d | 2018-10-22 13:00 | 2018-10-25 12:00 |  |  |  | 2018-10-23 16:13 | 2018-10-26 16:13 | 3d | 11.5d | 0d | 谢旻珊; 谢珮爽; 谢哲威 | 72h |  | 4,680 | 4,680 |  |
| 90 | 3.3.4.2 | 后端知识学习 |  | 5d | 2018-10-22 13:00 | 2018-10-29 12:00 | 89SS |  |  | 2018-10-23 16:13 | 2018-10-30 16:13 | 5d | 11.5d |  | 吴潘安; 卢彦谚 | 80h |  | 5,200 | 5,200 |  |
| 91 | 3.3.5 | demo搭建 |  | 1d | 2018-11-08 08:00 A | 2018-11-08 17:00 A | 88 | 100% |  | 2018-10-30 16:13 | 2018-10-31 16:13 | 1d? |  |  | 吴潘安 | 8h | 8h | 520 |  | 520 |
| 92 | 3.3.6 | **编写代码** |  | 9d? | 2018-11-01 08:00 A | 2018-11-13 17:00 | 87FS+5d | 13% | 7.8d? | 2018-10-30 16:13 | 2018-11-12 16:13 | 9d? | 0d |  |  | 324h | 36.66h | 21,060 | 15,600 | 2,382.9 |
| 93 | 3.3.6.1 | **前端代码编写** |  | 6d? | 2018-11-01 08:00 A | 2018-11-08 17:00 |  | 26% | 4.45d? | 2018-10-30 16:13 | 2018-11-02 16:13 | 3d? | 3d | 0d | 谢旻珊; 谢珮爽; 谢哲威 | 212h | 36.66h | 13,780 | 8,320 | 2,382.9 |
| 94 | 3.3.6.1.1 | 主页编码 |  | 2d | 2018-11-01 08:00 A | 2018-11-02 17:00 |  | 75% | 0.5d | 2018-10-30 16:13 | 2018-10-31 11:13 | 0.5d | 3.5d | 0d | 谢哲威 | 16h | 12h | 1,040 | 260 | 780 |
| 95 | 3.3.6.1.2 | 注册登录页编码 |  | 2d? | 2018-11-05 08:00 | 2018-11-06 17:00 | 94 |  |  | 2018-10-31 11:13 | 2018-11-01 11:13 | 1d? | 3.5d | 0d | 谢哲威 | 16h |  | 1,040 | 520 |  |
| 96 | 3.3.6.1.3 | 留言板页编码 |  | 0.5d? | 2018-11-07 08:00 | 2018-11-07 12:00 | 95 |  |  | 2018-11-01 11:13 | 2018-11-01 16:13 | 0.5d? | 3.5d | 0d | 谢哲威 | 4h |  | 260 | 260 |  |
| 97 | 3.3.6.1.4 | 课程页编码 |  | 1d? | 2018-11-07 13:00 | 2018-11-08 12:00 | 96 |  |  | 2018-11-01 16:13 | 2018-11-02 16:13 | 1d? | 3.5d |  | 谢哲威 | 8h |  | 520 | 520 |  |
| 98 | 3.3.6.1.5 | 管理员页编码 |  | 2d | 2018-11-01 08:00 | 2018-11-02 17:00 | 94SS |  |  | 2018-10-30 16:13 | 2018-11-01 16:13 | 2d | 7d |  | 谢珮爽 | 16h |  | 1,040 | 1,040 |  |
| 99 | 3.3.6.1.6 | 个人中心页编码 |  | 1d | 2018-11-08 08:00 A | 2018-11-08 17:00 | 94SS | 70% | 0.3d | 2018-10-30 16:13 | 2018-11-01 16:13 | 2d | 3d |  | 谢旻珊 | 8h | 5.6h | 520 | 1,040 | 364 |
| 100 | 3.3.6.2 | **后端代码编写** |  | 3d? | 2018-11-08 08:00 | 2018-11-12 17:00 | 93SS+5d |  |  | 2018-11-06 16:13 | 2018-11-09 16:13 | 3d? | 1d | 0d | 卢彦谚; 吴潘安 | 88h |  | 5,720 | 5,720 |  |
| 101 | 3.3.6.2.1 | 接口实现 |  | 1d? | 2018-11-08 08:00 | 2018-11-08 17:00 |  |  |  | 2018-11-06 16:13 | 2018-11-07 16:13 | 1d? | 1d | 0d | 吴潘安 | 8h |  | 520 | 520 |  |
| 102 | 3.3.6.2.2 | 注册登录注销业务编码 |  | 1d? | 2018-11-09 08:00 | 2018-11-09 17:00 | 101 |  |  | 2018-11-07 16:13 | 2018-11-08 16:13 | 1d? | 1d | 0d | 吴潘安 | 8h |  | 520 | 520 |  |
| 103 | 3.3.6.2.3 | 留言板业务编码 |  | 1d? | 2018-11-12 08:00 | 2018-11-12 17:00 | 102 |  |  | 2018-11-08 16:13 | 2018-11-09 16:13 | 1d? | 1d |  | 吴潘安 | 8h |  | 520 | 520 |  |
| 104 | 3.3.6.2.4 | 课程业务编码 |  | 1d? | 2018-11-09 08:00 | 2018-11-09 17:00 | 101 |  |  | 2018-11-07 16:13 | 2018-11-08 16:13 | 1d? | 1d | 0d | 卢彦谚 | 8h |  | 520 | 520 |  |
| 105 | 3.3.6.2.5 | 课程管理业务编码 |  | 1d? | 2018-11-12 08:00 | 2018-11-12 17:00 | 104 |  |  | 2018-11-08 16:13 | 2018-11-09 16:13 | 1d? | 1d |  | 卢彦谚 | 8h |  | 520 | 520 |  |
| 106 | 3.3.6.3 | 数据库搭建 |  | 3d | 2018-11-09 08:00 | 2018-11-13 17:00 | 93SS+6d |  |  | 2018-11-07 16:13 | 2018-11-12 16:13 | 3d | 0d |  | 吴志祥 | 24h |  | 1,560 | 1,560 |  |

| ID | WBS | Task | Type | Duration | Start | Finish | Predecessors | Baseline start | Baseline finish | Baseline duration | Total slack | Free slack | Resources | Work | Cost | Baseline cost |
| --- | --- | --- | --- | --- | --- | --- | --- | --- | --- | --- | --- | --- | --- | --- | --- | --- |
| 107 | 3.3.7 | **开发人员测试(初步调试)** |  | 5d | 2018-11-06 08:00 | 2018-11-12 17:00 | 92SS | 2018-10-30 16:13 | 2018-11-09 16:13 | 8d | 1d |  |  | 120h | 7,800 | 7,800 |
| 108 | 3.3.7.1 | 前端代码测试 |  | 3d | 2018-11-06 08:00 | 2018-11-08 17:00 | 93FF | 2018-10-30 16:13 | 2018-11-02 16:13 | 3d | 3d |  | 谢旻珊; 谢珮爽; 谢哲威 | 72h | 4,680 | 4,680 |
| 109 | 3.3.7.2 | 后台代码测试 |  | 3d | 2018-11-08 08:00 | 2018-11-12 17:00 | 100FF | 2018-11-06 16:13 | 2018-11-09 16:13 | 3d | 1d |  | 卢彦谚; 吴潘安 | 48h | 3,120 | 3,120 |
| 110 | 3.3.8 | 开发工作完毕 | milestone | 0d | 2018-11-13 17:00 | 2018-11-13 17:00 | 93, 100, 106 | 2018-11-12 16:13 | 2018-11-12 16:13 | 0d | 0d |  |  |  |  |  |
| 111 | 3.4 | **测试** |  | 13d | 2018-11-14 08:00 | 2018-11-30 17:00 | 84 | 2018-11-12 16:13 | 2018-11-29 16:13 | 13d | 0d |  |  | 424h | 27,560 | 27,560 |
| 112 | 3.4.1 | 制定单元测试计划 |  | 1d | 2018-11-14 08:00 | 2018-11-14 17:00 | 110 | 2018-11-12 16:13 | 2018-11-13 16:13 | 1d | 0d |  | 卢彦谚 | 8h | 520 | 520 |
| 113 | 3.4.2 | 制定整体测试计划 |  | 1d | 2018-11-15 08:00 | 2018-11-15 17:00 | 112 | 2018-11-13 16:13 | 2018-11-14 16:13 | 1d | 12d |  | 卢彦谚 | 8h | 520 | 520 |
| 114 | 3.4.3 | **单元测试** |  | 6d | 2018-11-19 08:00 | 2018-11-26 17:00 | 112FS+2d | 2018-11-15 16:13 | 2018-11-23 16:13 | 6d | 0d |  |  | 256h | 16,640 | 16,640 |
| 115 | 3.4.3.1 | **审阅模块化代码** |  | 3d | 2018-11-19 08:00 | 2018-11-21 17:00 |  | 2018-11-15 16:13 | 2018-11-20 16:13 | 3d | 3d | 0d |  | 48h | 3,120 | 3,120 |
| 116 | 3.4.3.1.1 | 审阅前端代码 |  | 3d | 2018-11-19 08:00 | 2018-11-21 17:00 |  | 2018-11-15 16:13 | 2018-11-20 16:13 | 3d | 3d | 0d | 谢旻珊 | 24h | 1,560 | 1,560 |
| 117 | 3.4.3.1.2 | 审阅后台代码 |  | 3d | 2018-11-19 08:00 | 2018-11-21 17:00 | 116SS | 2018-11-15 16:13 | 2018-11-20 16:13 | 3d | 3d |  | 卢彦谚 | 24h | 1,560 | 1,560 |
| 118 | 3.4.3.2 | 测试组件模块是否符合产品规范 |  | 4d | 2018-11-19 08:00 | 2018-11-22 17:00 | 115SS | 2018-11-15 16:13 | 2018-11-21 16:13 | 4d | 0d |  | 卢彦谚; 谢旻珊 | 64h | 4,160 | 4,160 |
| 119 | 3.4.3.3 | 找出不符合规范的异常情况 |  | 4d | 2018-11-19 08:00 | 2018-11-22 17:00 | 118SS | 2018-11-15 16:13 | 2018-11-21 16:13 | 4d | 0d |  | 卢彦谚; 谢旻珊 | 64h | 4,160 | 4,160 |
| 120 | 3.4.3.4 | 修改代码 |  | 3d | 2018-11-20 08:00 | 2018-11-22 17:00 | 119FF | 2018-11-16 16:13 | 2018-11-21 16:13 | 3d | 0d |  | 卢彦谚; 谢旻珊 | 48h | 3,120 | 3,120 |
| 121 | 3.4.3.5 | 重新测试经过修改的代码 |  | 2d | 2018-11-23 08:00 | 2018-11-26 17:00 | 120 | 2018-11-21 16:13 | 2018-11-23 16:13 | 2d | 0d |  | 卢彦谚; 谢旻珊 | 32h | 2,080 | 2,080 |
| 122 | 3.4.3.6 | 单元测试完成 | milestone | 0d | 2018-11-26 17:00 | 2018-11-26 17:00 | 121 | 2018-11-23 16:13 | 2018-11-23 16:13 | 0d | 0d |  |  |  |  |  |
| 123 | 3.4.4 | **整体测试** |  | 4d | 2018-11-27 08:00 | 2018-11-30 17:00 | 114 | 2018-11-23 16:13 | 2018-11-29 16:13 | 4d | 0d |  |  | 152h | 9,880 | 9,880 |
| 124 | 3.4.4.1 | 测试模块集成情况 |  | 2d | 2018-11-27 08:00 | 2018-11-28 17:00 |  | 2018-11-23 16:13 | 2018-11-27 16:13 | 2d | 0d |  | 吴潘安; 吴志祥 | 32h | 2,080 | 2,080 |
| 125 | 3.4.4.2 | 找出不符合规范的异常情况 |  | 3d | 2018-11-27 08:00 | 2018-11-29 17:00 | 124SS | 2018-11-23 16:13 | 2018-11-28 16:13 | 3d | 0d |  | 吴潘安; 吴志祥 | 48h | 3,120 | 3,120 |
| 126 | 3.4.4.3 | 修改代码 |  | 3d | 2018-11-27 08:00 | 2018-11-29 17:00 | 125FF | 2018-11-23 16:13 | 2018-11-28 16:13 | 3d | 0d |  | 吴潘安; 吴志祥 | 48h | 3,120 | 3,120 |
| 127 | 3.4.4.4 | 重新测试经过修改的代码 |  | 1d | 2018-11-30 08:00 | 2018-11-30 17:00 | 126 | 2018-11-28 16:13 | 2018-11-29 16:13 | 1d | 0d |  | 吴志祥; 吴潘安; 卢彦谚 | 24h | 1,560 | 1,560 |
| 128 | 3.4.4.5 | 整体测试完成 | milestone | 0d | 2018-11-30 17:00 | 2018-11-30 17:00 | 127 | 2018-11-29 16:13 | 2018-11-29 16:13 | 0d | 0d |  |  |  |  |  |
| 129 | 3.5 | **试生产** |  | 14d? | 2018-11-14 08:00 | 2018-12-03 17:00 | 110 | 2018-11-12 16:13 | 2018-11-30 16:13 | 14d? | 0d |  |  | 12h | 780 | 780 |
| 130 | 3.5.1 | 确定测试群体 |  | 0.5d | 2018-11-14 08:00 | 2018-11-14 12:00 | 110 | 2018-11-12 16:13 | 2018-11-13 11:13 | 0.5d | 12.5d |  | 谢哲威 | 4h | 260 | 260 |
| 131 | 3.5.2 | 获得用户反馈 |  | 4h? | 2018-12-03 08:00 | 2018-12-03 12:00 | 130, 128 | 2018-11-29 16:13 | 2018-11-30 11:13 | 4h? | 0d |  | 谢旻珊 | 4h | 260 | 260 |
| 132 | 3.5.3 | 评估测试信息 |  | 0.5d | 2018-12-03 13:00 | 2018-12-03 17:00 | 131 | 2018-11-30 11:13 | 2018-11-30 16:13 | 0.5d | 0d |  | 谢旻珊 | 4h | 260 | 260 |
| 133 | 3.5.4 | 试生产工作完成 | milestone | 0d | 2018-12-03 17:00 | 2018-12-03 17:00 | 132 | 2018-11-30 16:13 | 2018-11-30 16:13 | 0d | 0d |  |  |  |  |  |

| ID | WBS | Task | Type | Duration | Start | Finish | Predecessors | Complete | Remaining | Baseline start | Baseline finish | Baseline duration | Total slack | Free slack | Resources | Work | Actual work | Cost | Baseline cost | Actual cost |
| --- | --- | --- | --- | --- | --- | --- | --- | --- | --- | --- | --- | --- | --- | --- | --- | --- | --- | --- | --- | --- |
| 134 | 3.6 | **部署** |  | 17d | 2018-10-18 13:13 | 2018-11-12 13:13 | 87 |  |  | 2018-10-23 16:13 | 2018-11-15 16:13 | 17d | 15.47d |  |  | 64h |  | 4,160 | 4,160 |  |
| 135 | 3.6.1 | 确定部署策略 |  | 1d | 2018-10-18 13:13 | 2018-10-19 13:13 | 87 |  |  | 2018-10-23 16:13 | 2018-10-24 16:13 | 1d | 15.47d | 0d | 吴志祥 | 8h |  | 520 | 520 |  |
| 136 | 3.6.2 | 确定部署方法 |  | 1d | 2018-10-19 13:13 | 2018-10-22 13:13 | 135 |  |  | 2018-10-24 16:13 | 2018-10-25 16:13 | 1d | 15.47d | 0d | 吴志祥 | 8h |  | 520 | 520 |  |
| 137 | 3.6.3 | 获得部署所需资源 |  | 1d | 2018-10-24 13:13 | 2018-10-25 13:13 | 136FS+2d |  |  | 2018-10-29 16:13 | 2018-10-30 16:13 | 1d | 15.47d | 0d | 吴志祥 | 8h |  | 520 | 520 |  |
| 138 | 3.6.4 | 培训技术支持人员 |  | 2d | 2018-11-01 13:13 | 2018-11-05 13:13 | 137FS+5d |  |  | 2018-11-06 16:13 | 2018-11-08 16:13 | 2d | 15.47d | 0d | 吴志祥 | 16h |  | 1,040 | 1,040 |  |
| 139 | 3.6.5 | 部署软件 |  | 3d | 2018-11-07 13:13 | 2018-11-12 13:13 | 138FS+2d |  |  | 2018-11-12 16:13 | 2018-11-15 16:13 | 3d | 15.47d | 0d | 吴志祥 | 24h |  | 1,560 | 1,560 |  |
| 140 | 3.6.6 | 部署工作完成 | milestone | 0d | 2018-11-12 13:13 | 2018-11-12 13:13 | 139 |  |  | 2018-11-15 16:13 | 2018-11-15 16:13 | 0d | 15.47d |  |  |  |  |  |  |  |
| 141 | 4 | **监控** |  | 49d? | 2018-09-27 08:00 A | 2018-12-04 17:00 | 1SS | 34% | 32.51d? | 2018-09-27 08:00 | 2018-12-04 17:00 | 49d? | 0d |  |  | 103h | 103h | 6,695 | 5,135 | 6,695 |
| 142 | 4.1 | 周会1 | manual | 2h | 2018-09-27 08:00 A | 2018-09-27 10:00 A |  | 100% |  | 2018-09-27 08:00 | 2018-09-27 10:00 | 2h |  |  | 卢彦谚; 吴潘安; 吴志祥; 谢旻珊; 谢珮爽; 谢哲威 | 12h | 12h | 780 | 780 | 780 |
| 143 | 4.2 | 短谈1 | manual | 0.25h | 2018-10-09 08:00 A | 2018-10-09 08:15 A |  | 100% |  | 2018-10-09 08:00 | 2018-10-09 08:15 | 0.25h |  |  | 卢彦谚; 吴潘安; 谢旻珊; 谢珮爽; 谢哲威 | 1.25h | 1.25h | 81.25 | 81.25 | 81.25 |
| 144 | 4.3 | 周会2 | manual | 2h | 2018-10-11 08:00 A | 2018-10-11 10:00 A |  | 100% |  | 2018-10-11 08:00 | 2018-10-11 10:00 | 2h |  |  | 卢彦谚; 吴潘安; 吴志祥; 谢旻珊; 谢珮爽; 谢哲威 | 12h | 12h | 780 | 780 | 780 |
| 145 | 4.4 | 短谈2 | manual | 0.25h | 2018-10-16 08:00 A | 2018-10-16 08:15 A |  | 100% |  | 2018-10-16 08:00 | 2018-10-16 08:15 | 0.25h |  |  | 卢彦谚; 吴潘安; 吴志祥; 谢旻珊; 谢珮爽; 谢哲威 | 1.5h | 1.5h | 97.5 | 97.5 | 97.5 |
| 146 | 4.5 | 周会3 | manual | 2h | 2018-10-18 08:00 A | 2018-10-18 10:00 A |  | 100% |  | 2018-10-18 08:00 | 2018-10-18 10:00 | 2h |  |  | 卢彦谚; 吴潘安; 吴志祥; 谢旻珊; 谢珮爽; 谢哲威 | 12h | 12h | 780 | 780 | 780 |
| 147 | 4.6 | 短谈3 | manual | 0.25h | 2018-10-23 08:00 A | 2018-10-23 08:15 A |  | 100% |  | 2018-10-23 08:00 | 2018-10-23 08:15 | 0.25h |  |  | 卢彦谚; 吴志祥; 谢旻珊; 谢珮爽; 谢哲威 | 1.25h | 1.25h | 81.25 | 81.25 | 81.25 |
| 148 | 4.7 | 周会4 | manual | 2h | 2018-10-25 08:00 A | 2018-10-25 10:00 A |  | 100% |  | 2018-10-25 08:00 | 2018-10-25 10:00 | 2h |  |  | 卢彦谚; 吴潘安; 吴志祥; 谢旻珊; 谢珮爽; 谢哲威 | 12h | 12h | 780 | 780 | 780 |
| 149 | 4.8 | 短谈4 | manual | 0.25h | 2018-10-30 08:00 A | 2018-10-30 08:15 A |  | 100% |  | 2018-10-30 08:00 | 2018-10-30 08:15 | 0.25h |  |  | 卢彦谚; 吴潘安; 吴志祥; 谢旻珊; 谢珮爽; 谢哲威 | 1.5h | 1.5h | 97.5 | 97.5 | 97.5 |
| 150 | 4.9 | 周会5 | manual | 2h | 2018-11-01 08:00 A | 2018-11-01 10:00 A |  | 100% |  | 2018-11-01 08:00 | 2018-11-01 10:00 | 2h |  |  | 卢彦谚; 吴潘安; 吴志祥; 谢旻珊; 谢珮爽; 谢哲威 | 12h | 12h | 780 | 780 | 780 |
| 151 | 4.10 | 短谈5 | manual | 0.25h | 2018-11-06 08:00 A | 2018-11-06 08:15 A |  | 100% |  | 2018-11-06 08:00 | 2018-11-06 08:15 | 0.25h |  |  | 卢彦谚; 吴潘安; 吴志祥; 谢旻珊; 谢珮爽; 谢哲威 | 1.5h | 1.5h | 97.5 | 97.5 | 97.5 |
| 152 | 4.11 | 周会6 | manual | 2h | 2018-11-08 08:00 A | 2018-11-08 10:00 A |  | 100% |  | 2018-11-08 08:00 | 2018-11-08 10:00 | 2h |  |  | 卢彦谚; 吴潘安; 吴志祥; 谢旻珊; 谢珮爽; 谢哲威 | 12h | 12h | 780 | 780 | 780 |
| 153 | 4.12 | 短谈6 | manual | 0.25d? | 2018-11-13 08:00 A | 2018-11-13 10:00 A |  | 100% |  | 2018-11-13 08:00 | 2018-11-13 17:00 | 0.25h |  |  | 卢彦谚; 吴潘安; 吴志祥; 谢旻珊; 谢珮爽; 谢哲威 | 12h | 12h | 780 |  | 780 |
| 154 | 4.13 | 周会7 |  | 2h? | 2018-11-15 08:00 A | 2018-11-15 10:00 A |  | 100% |  | 2018-11-15 08:00 | 2018-11-15 17:00 | 2h |  |  | 卢彦谚; 吴潘安; 吴志祥; 谢旻珊; 谢珮爽; 谢哲威 | 12h | 12h | 780 |  | 780 |
| 155 | 4.14 | 短会7 | manual | 0.25d? | 2018-11-20 08:00 | 2018-11-20 10:00 |  |  |  | 2018-11-20 08:00 | 2018-11-20 17:00 | 1d? |  |  |  |  |  |  |  |  |
| 156 | 4.15 | 周会8 | manual | 1d? | 2018-11-22 08:00 | 2018-11-22 17:00 |  |  |  | 2018-11-22 08:00 | 2018-11-22 17:00 | 1d? |  |  |  |  |  |  |  |  |
| 157 | 4.16 | 短会8 | manual | 1d? | 2018-11-27 08:00 | 2018-11-27 17:00 |  |  |  | 2018-11-27 08:00 | 2018-11-27 17:00 | 1d? |  |  |  |  |  |  |  |  |
| 158 | 4.17 | 周会9 | manual | 1d? | 2018-11-29 08:00 | 2018-11-29 17:00 |  |  |  | 2018-11-29 08:00 | 2018-11-29 17:00 | 1d? |  |  |  |  |  |  |  |  |
| 159 | 4.18 | 短会9 | manual | 1d? | 2018-12-04 08:00 | 2018-12-04 17:00 |  |  |  | 2018-12-04 08:00 | 2018-12-04 17:00 | 1d? |  |  |  |  |  |  |  |  |

| ID | WBS | Task | Type | Duration | Start | Finish | Predecessors | Baseline start | Baseline finish | Baseline duration | Total slack | Resources | Work | Cost | Baseline cost |
| --- | --- | --- | --- | --- | --- | --- | --- | --- | --- | --- | --- | --- | --- | --- | --- |
| 160 | 5 | **收尾** |  | 14.5d? | 2018-11-16 08:00 | 2018-12-06 12:00 | 17FS-12d | 2018-11-12 16:13 | 2018-12-05 11:13 | 16.5d? | 0d |  | 84h | 5,460 | 5,460 |
| 161 | 5.1 | **文档整理** |  | 12d? | 2018-11-16 08:00 | 2018-12-03 17:00 | 129FS-12d | 2018-11-12 16:13 | 2018-11-28 16:13 | 12d? | 0d |  | 72h | 4,680 | 4,680 |
| 162 | 5.1.1 | 制定“帮助”规范计划 |  | 0.5d? | 2018-11-16 08:00 | 2018-11-16 12:00 | 133FS-12d | 2018-11-12 16:13 | 2018-11-13 11:13 | 0.5d? | 0d | 谢哲威 | 4h | 260 | 260 |
| 163 | 5.1.2 | 编写“帮助”文档 |  | 1d | 2018-11-16 13:00 | 2018-11-19 12:00 | 162 | 2018-11-13 11:13 | 2018-11-14 11:13 | 1d | 0d | 谢珮爽 | 8h | 520 | 520 |
| 164 | 5.1.3 | 开发“帮助”系统 |  | 3d | 2018-11-19 13:00 | 2018-11-22 12:00 | 163 | 2018-11-14 11:13 | 2018-11-19 11:13 | 3d | 7.5d | 谢珮爽 | 24h | 1,560 | 1,560 |
| 165 | 5.1.4 | 审阅“帮助”文档 |  | 0.5d? | 2018-11-19 13:00 | 2018-11-19 17:00 | 163 | 2018-11-14 11:13 | 2018-11-14 16:13 | 0.5d? | 0d | 谢哲威 | 4h | 260 | 260 |
| 166 | 5.1.5 | 根据反馈修改“帮助”文档 |  | 1d? | 2018-11-27 08:00 | 2018-11-27 17:00 | 165FS+5d | 2018-11-21 16:13 | 2018-11-22 16:13 | 1d? | 0d | 谢珮爽 | 8h | 520 | 520 |
| 167 | 5.1.6 | 制定用户手册规范 |  | 0.5d? | 2018-11-28 08:00 | 2018-11-28 12:00 | 166 | 2018-11-22 16:13 | 2018-11-23 11:13 | 0.5d? | 0d | 谢哲威 | 4h | 260 | 260 |
| 168 | 5.1.7 | 编写用户手册 |  | 1d | 2018-11-28 13:00 | 2018-11-29 12:00 | 167 | 2018-11-23 11:13 | 2018-11-26 11:13 | 1d | 0d | 谢珮爽 | 8h | 520 | 520 |
| 169 | 5.1.8 | 审阅所有的用户文档 |  | 0.5d? | 2018-11-29 13:00 | 2018-11-29 17:00 | 168 | 2018-11-26 11:13 | 2018-11-26 16:13 | 0.5d? | 0d | 谢哲威 | 4h | 260 | 260 |
| 170 | 5.1.9 | 根据反馈修改用户文档 |  | 1d? | 2018-11-30 08:00 | 2018-11-30 17:00 | 169 | 2018-11-26 16:13 | 2018-11-27 16:13 | 1d? | 0d | 谢珮爽 | 8h | 520 | 520 |
| 171 | 5.1.10 | 文档整理完成 | milestone | 1d? | 2018-12-03 08:00 | 2018-12-03 17:00 | 170 | 2018-11-27 16:13 | 2018-11-28 16:13 | 1d? | 0d |  |  |  |  |
| 172 | 5.2 | **总结经验教训** |  | 2.5d? | 2018-12-04 08:00 | 2018-12-06 12:00 | 161 | 2018-11-30 16:13 | 2018-12-05 11:13 | 2.5d? | 0d |  | 12h | 780 | 780 |
| 173 | 5.2.1 | 将经验教训记录存档 |  | 1d? | 2018-12-04 08:00 | 2018-12-04 17:00 | 171 | 2018-11-30 16:13 | 2018-12-03 16:13 | 1d? | 0d | 谢哲威 | 8h | 520 | 520 |
| 174 | 5.2.2 | 分发给工作组成员 |  | 0.5d? | 2018-12-05 08:00 | 2018-12-05 12:00 | 173 | 2018-12-03 16:13 | 2018-12-04 11:13 | 0.5d? | 0d | 谢哲威 | 4h | 260 | 260 |
| 175 | 5.2.3 | 回顾完成 | milestone | 1d? | 2018-12-05 13:00 | 2018-12-06 12:00 | 174 | 2018-12-04 11:13 | 2018-12-05 11:13 | 1d? | 0d |  |  |  |  |
