# 软件开发

Schedule from MS Project, 2018-09-27 to 2018-12-18, costs in ￥, A marks actual dates.

## Calendars

- 标准: Mon-Fri 08:00-12:00, 13:00-17:00; Sat-Sun off.

## Resources

| Resource | Rate |
| --- | --- |
| 卢彦谚 | 65 |
| 吴潘安 | 65 |
| 吴志祥 | 65 |
| 谢旻珊 | 65 |
| 谢珮爽 | 65 |
| 谢哲威 | 65 |

## Schedule

| ID | WBS | Task | Type | Duration | Start | Finish | Predecessors | Complete | Baseline start | Baseline finish | Baseline duration | Deadline | Resources | Work | Actual work | Cost | Baseline cost | Actual cost |
| --- | --- | --- | --- | --- | --- | --- | --- | --- | --- | --- | --- | --- | --- | --- | --- | --- | --- | --- |
| 1 | 1 | **启动** |  | 15.5d? | 2018-09-27 08:00 A | 2018-10-18 12:00 A |  | 100% | 2018-09-26 08:00 | 2018-10-18 12:00 | 16.5d? |  |  | 12h | 12h | 780 | 780 | 780 |
| 2 | 1.1 | 可行性分析 |  | 0.5d? | 2018-10-08 08:00 A | 2018-10-08 12:00 A |  | 100% | 2018-09-26 08:00 | 2018-09-26 12:00 | 0.5d? |  | 吴志祥 | 4h | 4h | 260 | 260 | 260 |
| 3 | 1.2 | 项目干系人识别 |  | 0.5d? | 2018-09-27 08:00 A | 2018-09-27 12:00 A | 2 | 100% | 2018-09-27 08:00 | 2018-09-27 12:00 | 0.5d? |  | 谢旻珊 | 4h | 4h | 260 | 260 | 260 |
| 4 | 1.3 | 制订项目章程 |  | 0.5d? | 2018-10-18 08:00 A | 2018-10-18 12:00 A | 3 | 100% | 2018-10-10 08:00 | 2018-10-11 17:00 | 0.5d? |  | 谢哲威 | 4h | 4h | 260 | 260 | 260 |
| 5 | 2 | **计划** |  | 7d? | 2018-09-27 08:00 A | 2018-10-07 17:00 A | 1FS-15d | 100% | 2018-09-27 08:00 | 2018-10-02 12:00 | 3.5d? |  |  | 57h | 57h | 3,705 | 3,185 | 3,705 |
| 6 | 2.1 | **项目范围计划** |  | 7d | 2018-09-27 08:00 A | 2018-10-07 17:00 A | 4FS-15d | 100% | 2018-09-27 08:00 | 2018-10-02 12:00 | 3.5d |  |  | 32h | 32h | 2,080 | 1,560 | 2,080 |
| 7 | 2.1.1 | 分析项目范围、目标描述 |  | 4h | 2018-09-27 08:00 A | 2018-09-27 12:00 A |  | 100% | 2018-09-27 08:00 | 2018-09-27 12:00 | 4h | 2018-09-27 17:00 | 吴志祥; 谢旻珊; 谢哲威 | 12h | 12h | 780 | 780 | 780 |
| 8 | 2.1.2 | 定义预备资源 |  | 0.5d | 2018-09-27 08:00 A | 2018-09-27 12:00 A | 7 | 100% | 2018-09-28 08:00 | 2018-09-28 17:00 | 0.5d |  | 谢旻珊; 谢哲威 | 8h | 8h | 520 | 520 | 520 |
| 9 | 2.1.3 | 获得核心资源 |  | 0.5d | 2018-09-27 08:00 A | 2018-09-27 12:00 A | 8 | 100% | 2018-09-28 08:00 | 2018-09-28 17:00 | 0.5d |  | 谢哲威 | 4h | 4h | 260 | 260 | 260 |
| 10 | 2.1.4 | 确定项目范围规划 | milestone | 1d | 2018-10-05 08:00 A | 2018-10-07 17:00 A | 9 | 100% | 2018-09-27 13:00 | 2018-10-02 12:00 | 3d |  | 吴志祥 | 8h | 8h | 520 |  | 520 |
| 11 | 2.2 | 工作分解结构（WBS） | manual | 1d? | 2018-09-28 08:00 A | 2018-09-28 17:00 A | 10 | 100% | 2018-09-30 08:00 | 2018-09-30 17:00 | 1d? |  | 谢哲威 | 8h | 8h | 520 | 520 | 520 |
| 12 | 2.3 | **项目时间表计划** |  | 1d? | 2018-09-28 08:00 A | 2018-09-30 12:00 A | 6 | 100% | 2018-09-28 08:00 | 2018-09-30 12:00 | 1d? |  | 谢哲威 | 16h | 16h | 1,040 | 1,040 | 1,040 |
| 13 | 2.3.1 | 活动资源估算 |  | 2h? | 2018-09-28 08:00 A | 2018-09-28 10:00 A |  | 100% | 2018-10-04 08:00 | 2018-10-04 17:00 | 2h? |  | 谢哲威 | 2h | 2h | 130 | 130 | 130 |
| 14 | 2.3.2 | 活动工期估算 | manual | 0.25d? | 2018-09-29 08:00 A | 2018-09-29 10:00 A | 13FF | 100% | 2018-10-04 08:00 | 2018-10-04 17:00 | 0.25d? |  | 谢哲威 | 2h | 2h | 130 | 130 | 130 |
| 15 | 2.3.3 | 制订进度计划 | manual | 0.5d? | 2018-09-30 08:00 A | 2018-09-30 12:00 A | 14 | 100% | 2018-10-04 08:00 | 2018-10-05 17:00 | 0.5d? |  | 谢哲威 | 4h | 4h | 260 | 260 | 260 |
| 16 | 2.4 | 项目成本计划 |  | 0.12d? | 2018-10-02 08:00 A | 2018-10-02 09:00 A | 12FF | 100% | 2018-10-04 08:00 | 2018-10-05 17:00 | 0.12d? |  | 谢哲威 | 1h | 1h | 65 | 65 | 65 |
| 17 | 3 | **执行** |  | 57.5d? | 2018-09-27 08:00 A | 2018-12-17 12:00 A | 5 | 100% | 2018-09-27 08:00 | 2018-11-30 16:13 | 46.9d? |  |  | 2088h | 2088h | 133,120 | 102,934 | 133,120 |
| 18 | 3.1 | **需求分析调研** |  | 15.5d? | 2018-09-27 08:00 A | 2018-10-18 12:00 A | 16 | 100% | 2018-09-27 08:00 | 2018-10-16 17:00 | 14d? |  |  | 176h | 176h | 11,440 | 23,140 | 11,440 |
| 19 | 3.1.1 | 行为需求分析 |  | 1d | 2018-09-27 08:00 A | 2018-09-27 17:00 A |  | 100% | 2018-09-27 08:00 | 2018-09-30 17:00 | 1d |  | 谢哲威; 卢彦谚; 吴潘安; 吴志祥; 谢旻珊; 谢珮爽 | 48h | 48h | 3,120 | 3,120 | 3,120 |
| 20 | 3.1.2 | **起草初步的需求文档** |  | 4d? | 2018-09-28 08:00 A | 2018-10-03 17:00 A | 19 | 100% | 2018-09-28 08:00 | 2018-10-03 17:00 | 4d? |  |  | 36h | 36h | 2,340 | 14,820 | 2,340 |
| 21 | 3.1.2.1 | 在线编译功能分析 |  | 0.5d? | 2018-09-28 08:00 A | 2018-09-28 12:00 A |  | 100% | 2018-09-28 08:00 | 2018-10-05 17:00 | 0.5d? |  | 谢旻珊 | 4h | 4h | 260 | 260 | 260 |
| 22 | 3.1.2.2 | 每日学习时长功能分析 | manual | 1d? | 2018-09-30 08:00 A | 2018-09-30 17:00 A | 21SS | 100% | 2018-09-28 08:00 | 2018-10-05 17:00 | 1d? |  | 谢珮爽 | 8h | 8h | 520 | 520 | 520 |
| 23 | 3.1.2.3 | 实例展示功能分析 |  | 1d? | 2018-10-01 08:00 A | 2018-10-01 17:00 A | 21SS | 100% | 2018-09-28 08:00 | 2018-10-05 17:00 | 1d? |  | 卢彦谚 | 8h | 8h | 520 | 520 | 520 |
| 24 | 3.1.2.4 | 留言板功能分析 |  | 1d? | 2018-10-03 08:00 A | 2018-10-03 17:00 A | 21SS | 100% | 2018-09-28 08:00 | 2018-10-05 17:00 | 1d? |  | 吴志祥 | 8h | 8h | 520 | 520 | 520 |
| 25 | 3.1.2.5 | 课程选择功能分析 |  | 1d? | 2018-10-03 08:00 A | 2018-10-03 17:00 A | 21SS | 100% | 2018-09-28 08:00 | 2018-10-05 17:00 | 1d? |  | 吴潘安 | 8h | 8h | 520 | 520 | 520 |
| 26 | 3.1.3 | 功能性需求确认 | milestone | 1d? | 2018-10-04 08:00 A | 2018-10-04 17:00 A | 20 | 100% | 2018-09-28 08:00 | 2018-10-05 17:00 | 1d? |  |  |  |  |  |  |  |

| ID | WBS | Task | Type | Duration | Start | Finish | Predecessors | Complete | Baseline start | Baseline finish | Baseline duration | Constraint | Resources | Work | Actual work | Cost | Baseline cost | Actual cost |
| --- | --- | --- | --- | --- | --- | --- | --- | --- | --- | --- | --- | --- | --- | --- | --- | --- | --- | --- |
| 27 | 3.1.4 | **原型开发** |  | 9d? | 2018-09-28 08:00 A | 2018-10-10 17:00 A | 26 | 100% | 2018-09-30 08:00 | 2018-10-05 17:00 | 5d? |  |  | 56h | 56h | 3,640 | 2,600 | 3,640 |
| 28 | 3.1.4.1 | 实例展示原型设计 | manual | 1d? | 2018-09-30 08:00 A | 2018-09-30 17:00 A |  | 100% | 2018-10-02 08:00 | 2018-10-07 17:00 | 1d? |  | 卢彦谚 | 8h | 8h | 520 | 520 | 520 |
| 29 | 3.1.4.2 | 课程内容原型设计 | manual | 1d | 2018-09-30 08:00 A | 2018-09-30 17:00 A | 28SS | 100% | 2018-10-02 08:00 | 2018-10-07 17:00 | 1d |  | 谢旻珊 | 8h | 8h | 520 | 520 | 520 |
| 30 | 3.1.4.3 | 在线编译原型设计 |  | 1d | 2018-09-28 08:00 A | 2018-09-28 17:00 A | 29 | 100% | 2018-10-02 08:00 | 2018-10-07 17:00 | 1d |  | 谢旻珊 | 8h | 8h | 520 | 520 | 520 |
| 31 | 3.1.4.4 | 个人中心原型设计 | manual | 2d | 2018-10-05 08:00 A | 2018-10-07 17:00 A | 28SS | 100% | 2018-10-02 08:00 | 2018-10-07 17:00 | 1d? |  | 谢珮爽 | 16h | 16h | 1,040 | 520 | 1,040 |
| 32 | 3.1.4.5 | 主页原型设计 |  | 2d? | 2018-10-09 08:00 A | 2018-10-10 17:00 A | 28SS | 100% | 2018-10-02 08:00 | 2018-10-07 17:00 | 1d? |  | 谢哲威 | 16h | 16h | 1,040 | 520 | 1,040 |
| 33 | 3.1.5 | 非功能性需求分析 | manual | 1d | 2018-10-14 08:00 A | 2018-10-14 17:00 A | 27 | 100% | 2018-10-08 08:00 | 2018-10-08 17:00 | 1d? |  | 谢珮爽 | 8h | 8h | 520 | 520 | 520 |
| 34 | 3.1.6 | 审阅需求文档 |  | 4h? | 2018-10-15 08:00 A | 2018-10-15 12:00 A | 26, 33 | 100% | 2018-10-09 08:00 | 2018-10-09 17:00 | 1d? |  | 谢哲威 | 4h | 4h | 260 | 520 | 260 |
| 35 | 3.1.7 | 根据反馈修改需求文档 |  | 2d | 2018-10-15 08:00 A | 2018-10-16 17:00 A | 34SS | 100% | 2018-10-09 08:00 | 2018-10-10 17:00 | 2d |  | 谢珮爽 | 16h | 16h | 1,040 | 1,040 | 1,040 |
| 36 | 3.1.8 | 确定交付期限 |  | 0.5d | 2018-10-16 08:00 A | 2018-10-16 17:00 A | 35 | 100% | 2018-10-16 13:00 | 2018-10-16 17:00 | 0.5d | finish no earlier than 2018-10-16 17:00 | 谢哲威 | 4h | 4h | 260 | 260 | 260 |
| 37 | 3.1.9 | 获得所需资源 |  | 0.5d | 2018-10-18 08:00 A | 2018-10-18 12:00 A | 35 | 100% | 2018-10-11 08:00 | 2018-10-11 12:00 | 0.5d |  | 谢旻珊 | 4h | 4h | 260 | 260 | 260 |
| 38 | 3.1.10 | 需求分析完成 | milestone | 0d | 2018-10-18 12:00 A | 2018-10-18 12:00 A | 37 | 100% | 2018-10-11 12:00 | 2018-10-11 12:00 | 0d |  |  |  |  |  |  |  |
| 39 | 3.2 | **设计** |  | 16d? | 2018-10-19 08:00 A | 2018-11-09 17:00 A | 18FS+1d | 100% | 2018-10-18 08:00 | 2018-11-06 17:00 | 14d? |  |  | 211h | 211h | 13,715 | 12,714 | 13,715 |
| 40 | 3.2.1 | **概要设计** |  | 7d? | 2018-10-19 08:00 A | 2018-10-29 17:00 A | 38FS+1d | 100% | 2018-10-18 08:00 | 2018-10-26 17:00 | 7d? |  |  | 111h | 111h | 7,215 | 6,240 | 7,215 |
| 41 | 3.2.1.1 | **系统结构设计** |  | 0.5d? | 2018-10-21 08:00 A | 2018-10-22 12:00 A | 38 | 100% | 2018-10-18 08:00 | 2018-10-18 17:00 | 1d? |  |  | 8h | 8h | 520 | 1,040 | 520 |
| 42 | 3.2.1.1.1 | 系统逻辑架构设计 | manual | 4h? | 2018-10-21 08:00 A | 2018-10-21 12:00 A |  | 100% | 2018-10-18 08:00 | 2018-10-18 17:00 | 1d? |  | 吴潘安 | 4h | 4h | 260 | 520 | 260 |
| 43 | 3.2.1.1.2 | 系统物理架构设计 |  | 4h? | 2018-10-22 08:00 A | 2018-10-22 12:00 A | 42SS | 100% | 2018-10-18 08:00 | 2018-10-18 17:00 | 1d? |  | 吴志祥 | 4h | 4h | 260 | 520 | 260 |
| 44 | 3.2.1.2 | **系统数据模型** |  | 3d? | 2018-10-21 08:00 A | 2018-10-24 17:00 A | 41SS | 100% | 2018-10-18 08:00 | 2018-10-23 12:00 | 3.5d? |  |  | 72h | 72h | 4,680 | 3,120 | 4,680 |
| 45 | 3.2.1.2.1 | E-R模型设计 |  | 1d? | 2018-10-22 08:00 A | 2018-10-22 17:00 A |  | 100% | 2018-10-18 08:00 | 2018-10-18 12:00 | 0.5d? |  | 卢彦谚 | 8h | 8h | 520 | 260 | 520 |
| 46 | 3.2.1.2.2 | 数据字典 |  | 1d? | 2018-10-23 08:00 A | 2018-10-23 17:00 A | 45 | 100% | 2018-10-18 13:00 | 2018-10-18 17:00 | 0.5d? |  | 卢彦谚 | 8h | 8h | 520 | 260 | 520 |
| 47 | 3.2.1.2.3 | 数据库设计 |  | 1d? | 2018-10-23 08:00 A | 2018-10-23 17:00 A | 46 | 100% | 2018-10-19 08:00 | 2018-10-19 17:00 | 1d? |  | 吴志祥 | 8h | 8h | 520 | 520 | 520 |
| 48 | 3.2.1.2.4 | 系统接口设计 | manual | 1d | 2018-10-21 08:00 A | 2018-10-21 17:00 A | 45 | 100% | 2018-10-18 13:00 | 2018-10-18 17:00 | 0.5d? |  | 吴潘安 | 8h | 8h | 520 | 260 | 520 |
| 49 | 3.2.1.2.5 | 完善原型 | manual | 4d | 2018-10-21 08:00 A | 2018-10-24 17:00 A | 18 | 100% | 2018-10-18 08:00 | 2018-10-22 17:00 | 3d |  | 谢哲威 | 32h | 32h | 2,080 | 1,560 | 2,080 |
| 50 | 3.2.1.2.6 | 用户界面设计 |  | 1d? | 2018-10-23 08:00 A | 2018-10-23 17:00 A | 49 | 100% | 2018-10-23 08:00 | 2018-10-23 12:00 | 0.5d? |  | 谢哲威 | 8h | 8h | 520 | 260 | 520 |

| ID | WBS | Task | Type | Duration | Start | Finish | Predecessors | Complete | Baseline start | Baseline finish | Baseline duration | Resources | Work | Actual work | Cost | Baseline cost | Actual cost |
| --- | --- | --- | --- | --- | --- | --- | --- | --- | --- | --- | --- | --- | --- | --- | --- | --- | --- |
| 51 | 3.2.1.3 | **非功能性设计** |  | 2.12d? | 2018-10-19 08:00 A | 2018-10-23 09:00 A | 44, 41 | 100% | 2018-10-23 13:00 | 2018-10-24 17:00 | 1.5d? |  | 19h | 19h | 1,235 | 1,300 | 1,235 |
| 52 | 3.2.1.3.1 | 性能设计 |  | 0.12d | 2018-10-23 08:00 A | 2018-10-23 09:00 A |  | 100% | 2018-10-23 13:00 | 2018-10-23 17:00 | 0.5d | 吴志祥 | 1h | 1h | 65 | 260 | 65 |
| 53 | 3.2.1.3.2 | 可靠性设计 |  | 0.12d? | 2018-10-23 08:00 A | 2018-10-23 09:00 A | 52 | 100% | 2018-10-24 08:00 | 2018-10-24 12:00 | 0.5d? | 吴志祥 | 1h | 1h | 65 | 260 | 65 |
| 54 | 3.2.1.3.3 | 可用性设计 |  | 0.12d? | 2018-10-23 08:00 A | 2018-10-23 09:00 A | 53 | 100% | 2018-10-24 13:00 | 2018-10-24 17:00 | 0.5d? | 吴志祥 | 1h | 1h | 65 | 260 | 65 |
| 55 | 3.2.1.3.4 | 安全性设计 |  | 1d | 2018-10-19 08:00 A | 2018-10-19 17:00 A | 52SS | 100% | 2018-10-23 13:00 | 2018-10-23 17:00 | 0.5d? | 吴潘安 | 8h | 8h | 520 | 260 | 520 |
| 56 | 3.2.1.3.5 | 数据保密设计 |  | 1d | 2018-10-19 08:00 A | 2018-10-19 17:00 A | 55 | 100% | 2018-10-24 08:00 | 2018-10-24 12:00 | 0.5d? | 吴潘安 | 8h | 8h | 520 | 260 | 520 |
| 57 | 3.2.1.4 | 约束和假定 |  | 1d? | 2018-10-22 08:00 A | 2018-10-22 17:00 A | 51SS | 100% | 2018-10-23 13:00 | 2018-10-23 17:00 | 0.5d? | 谢哲威 | 8h | 8h | 520 | 260 | 520 |
| 58 | 3.2.1.5 | 审阅概要设计 |  | 0.5d | 2018-10-25 08:00 A | 2018-10-25 12:00 A | 41, 44, 51, 57 | 100% | 2018-10-25 08:00 | 2018-10-25 17:00 | 1d | 谢哲威 | 4h | 4h | 260 | 520 | 260 |
| 59 | 3.2.1.6 | 根据反馈修改概要设计 |  | 2d? | 2018-10-25 08:00 A | 2018-10-26 17:00 A | 58SS | 100% | 2018-10-25 08:00 | 2018-10-25 17:00 | 1d? |  |  |  |  |  |  |
| 60 | 3.2.1.7 | 概要设计完成 | milestone | 1d? | 2018-10-29 08:00 A | 2018-10-29 17:00 A | 59 | 100% | 2018-10-26 08:00 | 2018-10-26 17:00 | 1d? |  |  |  |  |  |  |
| 61 | 3.2.2 | **详细设计** |  | 15d? | 2018-10-21 08:00 A | 2018-11-09 17:00 A | 60 | 100% | 2018-10-29 08:00 | 2018-11-06 17:00 | 7d? |  | 100h | 100h | 6,500 | 6,474 | 6,500 |
| 62 | 3.2.2.1 | 制定系统编程规范约定 | manual | 1d | 2018-10-21 08:00 A | 2018-10-21 17:00 A |  | 100% | 2018-10-18 08:00 | 2018-10-22 17:00 | 0.5d? | 谢哲威 | 8h | 8h | 520 | 260 | 520 |
| 63 | 3.2.2.2 | 审阅编程规范 | manual | 1d | 2018-10-21 08:00 A | 2018-10-21 17:00 A | 62 | 100% | 2018-10-30 13:00 | 2018-10-30 17:00 | 0.5d? |  |  |  |  |  |  |
| 64 | 3.2.2.3 | 根据反馈修改编程规范 | manual | 1d | 2018-10-22 08:00 A | 2018-10-22 17:00 A | 63SS | 100% | 2018-10-30 13:00 | 2018-10-30 17:00 | 0.5d? |  |  |  |  |  |  |
| 65 | 3.2.2.4 | **系统复用计划** |  | 0.5d | 2018-11-06 08:00 A | 2018-11-06 12:00 A |  | 100% | 2018-11-04 08:00 | 2018-11-04 17:00 | 0d? |  | 8h | 8h | 520 | 1,040 | 520 |
| 66 | 3.2.2.4.1 | 前端复用计划 |  | 0.5d | 2018-11-06 08:00 A | 2018-11-06 12:00 A |  | 100% | 2018-11-04 08:00 | 2018-11-04 17:00 | 1d | 谢旻珊 | 4h | 4h | 260 | 520 | 260 |
| 67 | 3.2.2.4.2 | 后台复用计划 |  | 0.5d | 2018-11-06 08:00 A | 2018-11-06 12:00 A | 66SS | 100% | 2018-11-04 08:00 | 2018-11-04 17:00 | 1d | 吴潘安 | 4h | 4h | 260 | 520 | 260 |
| 68 | 3.2.2.5 | **系统接口设计** |  | 1d? | 2018-11-04 08:00 A | 2018-11-05 17:00 A |  | 100% | 2018-10-29 08:00 | 2018-10-29 17:00 | 1d? |  | 16h | 16h | 1,040 | 598 | 1,040 |
| 69 | 3.2.2.5.1 | 内部接口详细设计 | manual | 1d | 2018-11-04 08:00 A | 2018-11-04 17:00 A |  | 100% | 2018-10-29 08:00 | 2018-10-29 12:00 | 0.5d? | 吴潘安 | 8h | 8h | 520 | 260 | 520 |
| 70 | 3.2.2.5.2 | 外部接口详细设计 | manual | 1d | 2018-11-05 08:00 A | 2018-11-05 17:00 A | 69 | 100% | 2018-10-29 13:00 | 2018-10-29 17:00 | 0.5d? | 吴潘安 | 8h | 8h | 520 | 260 | 520 |
| 71 | 3.2.2.6 | **对象模型设计** |  | 3d? | 2018-10-31 08:00 A | 2018-11-03 17:00 A |  | 100% | 2018-10-29 08:00 | 2018-10-30 17:00 | 2d? |  | 16h | 16h | 1,040 | 1,196 | 1,040 |
| 72 | 3.2.2.6.1 | 对象模型图（类图） |  | 1d? | 2018-10-31 08:00 A | 2018-10-31 17:00 A |  | 100% | 2018-10-29 08:00 | 2018-10-29 17:00 | 1d? | 卢彦谚 | 8h | 8h | 520 | 520 | 520 |
| 73 | 3.2.2.6.2 | 对象描述 | manual | 1d | 2018-11-03 08:00 A | 2018-11-03 17:00 A | 72 | 100% | 2018-10-30 08:00 | 2018-10-30 17:00 | 1d? | 谢旻珊 | 8h | 8h | 520 | 520 | 520 |
| 74 | 3.2.2.7 | **用例详细设计** |  | 1.5d? | 2018-11-04 08:00 A | 2018-11-06 12:00 A | 73 | 100% | 2018-10-31 08:00 | 2018-10-31 17:00 | 1d? |  | 40h | 40h | 2,600 | 2,080 | 2,600 |
| 75 | 3.2.2.7.1 | 系统顺序图设计 |  | 2d | 2018-11-04 08:00 A | 2018-11-05 17:00 A |  | 100% | 2018-10-31 08:00 | 2018-10-31 17:00 | 1d? | 卢彦谚; 谢旻珊 | 32h | 32h | 2,080 | 1,040 | 2,080 |
| 76 | 3.2.2.7.2 | 系统状态图设计 |  | 0.5d? | 2018-11-06 08:00 A | 2018-11-06 12:00 A |  | 100% | 2018-10-31 08:00 | 2018-10-31 17:00 | 1d? | 吴志祥; 谢珮爽 | 8h | 8h | 520 | 1,040 | 520 |
| 77 | 3.2.2.8 | 审阅详细设计 |  | 0.5d | 2018-11-08 08:00 A | 2018-11-08 12:00 A | 65, 48, 71, 74 | 100% | 2018-11-05 08:00 | 2018-11-05 17:00 | 1d | 谢哲威 | 4h | 4h | 260 | 520 | 260 |
| 78 | 3.2.2.9 | 根据反馈修改详细设计 |  | 1d? | 2018-11-08 08:00 A | 2018-11-08 17:00 A | 77SS | 100% | 2018-11-05 08:00 | 2018-11-05 17:00 | 1d? | 谢珮爽 | 8h | 8h | 520 | 520 | 520 |
| 79 | 3.2.2.10 | 详细设计完成 | milestone | 1d? | 2018-11-09 08:00 A | 2018-11-09 17:00 A | 78 | 100% | 2018-11-06 08:00 | 2018-11-06 17:00 | 1d? |  |  |  |  |  |  |
| 80 | 3.2.3 | 设计工作完成 | milestone | 0d | 2018-11-09 17:00 A | 2018-11-09 17:00 A | 79 | 100% | 2018-11-06 17:00 | 2018-11-06 17:00 | 0d |  |  |  |  |  |  |

| ID | WBS | Task | Duration | Start | Finish | Predecessors | Complete | Baseline start | Baseline finish | Baseline duration | Resources | Work | Actual work | Cost | Baseline cost | Actual cost |
| --- | --- | --- | --- | --- | --- | --- | --- | --- | --- | --- | --- | --- | --- | --- | --- | --- |
| 81 | 3.3 | **开发** | 40d? | 2018-10-16 08:00 A | 2018-12-10 17:00 A | 18FS+2d | 100% | 2018-10-19 08:00 | 2018-11-12 16:13 | 16.9d? |  | 913h | 913h | 56,745 | 34,580 | 56,745 |
| 82 | 3.3.1 | 审阅需求文档 | 1d | 2018-10-16 08:00 A | 2018-10-16 17:00 A | 38FS+2d | 100% | 2018-10-19 08:00 | 2018-10-19 12:00 | 0.5d | 吴潘安 | 8h | 8h | 520 | 260 | 520 |
| 83 | 3.3.2 | 制定开发计划 | 1d? | 2018-10-17 08:00 A | 2018-10-17 17:00 A | 82 | 100% | 2018-10-19 13:00 | 2018-10-22 12:00 | 1d? | 吴潘安 | 8h | 8h | 520 | 520 | 520 |
| 84 | 3.3.3 | 分派任务给开发人员 | 0.12d | 2018-10-18 08:00 A | 2018-10-18 13:13 A | 83 | 100% | 2018-10-22 13:00 | 2018-10-23 16:13 | 1d | 吴潘安 | 1h | 1h | 65 | 520 | 65 |
| 85 | 3.3.4 | **知识学习** | 11d | 2018-10-16 08:00 A | 2018-10-30 17:00 A | 84 | 100% | 2018-10-23 16:13 | 2018-10-30 16:13 | 5d |  | 240h | 240h | 15,600 | 9,880 | 15,600 |
| 86 | 3.3.4.1 | 前端知识学习 | 4d | 2018-10-25 08:00 A | 2018-10-30 17:00 A |  | 100% | 2018-10-23 16:13 | 2018-10-26 16:13 | 3d | 谢旻珊; 谢珮爽; 谢哲威 | 96h | 96h | 6,240 | 4,680 | 6,240 |
| 87 | 3.3.4.2 | 后端知识学习 | 9d | 2018-10-16 08:00 A | 2018-10-28 17:00 A | 86SS | 100% | 2018-10-23 16:13 | 2018-10-30 16:13 | 5d | 吴潘安; 卢彦谚 | 144h | 144h | 9,360 | 5,200 | 9,360 |
| 88 | 3.3.5 | demo搭建 | 3d | 2018-11-09 08:00 A | 2018-11-13 17:00 A | 85 | 100% | 2018-10-30 16:13 | 2018-10-31 16:13 | 1d? | 吴潘安 | 24h | 24h | 1,560 |  | 1,560 |
| 89 | 3.3.6 | **编写代码** | 24d? | 2018-11-06 08:00 A | 2018-12-09 17:00 A | 84FS+5d | 100% | 2018-10-30 16:13 | 2018-11-12 16:13 | 9d? |  | 384h | 384h | 22,360 | 15,600 | 22,360 |
| 90 | 3.3.6.1 | **前端代码编写** | 22d? | 2018-11-06 08:00 A | 2018-12-05 17:00 A |  | 100% | 2018-10-30 16:13 | 2018-11-02 16:13 | 3d? |  | 136h | 136h | 8,840 | 8,320 | 8,840 |
| 91 | 3.3.6.1.1 | 主页编码 | 2d | 2018-11-06 08:00 A | 2018-11-07 17:00 A |  | 100% | 2018-10-30 16:13 | 2018-10-31 11:13 | 0.5d | 谢哲威 | 16h | 16h | 1,040 | 260 | 1,040 |
| 92 | 3.3.6.1.2 | 注册登录页编码 | 1d? | 2018-11-09 08:00 A | 2018-11-10 17:00 A | 91 | 100% | 2018-10-31 11:13 | 2018-11-01 11:13 | 1d? | 谢哲威 | 8h | 8h | 520 | 520 | 520 |
| 93 | 3.3.6.1.3 | 留言板页编码 | 3d? | 2018-11-13 08:00 A | 2018-11-15 17:00 A | 92 | 100% | 2018-11-01 11:13 | 2018-11-01 16:13 | 0.5d? | 谢哲威 | 24h | 24h | 1,560 | 260 | 1,560 |
| 94 | 3.3.6.1.4 | 课程页编码 | 2d? | 2018-11-29 08:00 A | 2018-12-02 17:00 A | 93 | 100% | 2018-11-01 16:13 | 2018-11-02 16:13 | 1d? | 谢哲威 | 16h | 16h | 1,040 | 520 | 1,040 |
| 95 | 3.3.6.1.5 | 管理员页编码 | 3d | 2018-12-03 08:00 A | 2018-12-05 17:00 A | 91SS | 100% | 2018-10-30 16:13 | 2018-11-01 16:13 | 2d | 谢珮爽 | 24h | 24h | 1,560 | 1,040 | 1,560 |
| 96 | 3.3.6.1.6 | 个人中心页编码 | 6d | 2018-11-08 08:00 A | 2018-11-15 17:00 A | 91SS | 100% | 2018-10-30 16:13 | 2018-11-01 16:13 | 2d | 谢旻珊 | 48h | 48h | 3,120 | 1,040 | 3,120 |
| 97 | 3.3.6.2 | **后端代码编写** | 23d? | 2018-11-07 08:00 A | 2018-12-09 17:00 A | 90SS+5d | 100% | 2018-11-06 16:13 | 2018-11-09 16:13 | 3d? |  | 208h | 208h | 10,920 | 5,720 | 10,920 |
| 98 | 3.3.6.2.1 | 接口实现 | 8d? | 2018-11-07 08:00 A | 2018-11-18 17:00 A |  | 100% | 2018-11-06 16:13 | 2018-11-07 16:13 | 1d? | 吴潘安 | 64h | 64h | 4,160 | 520 | 4,160 |
| 99 | 3.3.6.2.2 | 注册登录注销业务编码 | 3d? | 2018-11-07 08:00 A | 2018-11-11 17:00 A | 98 | 100% | 2018-11-07 16:13 | 2018-11-08 16:13 | 1d? | 吴潘安 | 24h | 24h | 1,560 | 520 | 1,560 |
| 100 | 3.3.6.2.3 | 留言板业务编码 | 5d? | 2018-11-29 08:00 A | 2018-12-05 17:00 A | 99 | 100% | 2018-11-08 16:13 | 2018-11-09 16:13 | 1d? | 卢彦谚 | 40h | 40h |  | 520 |  |
| 101 | 3.3.6.2.4 | 个人中心业务编码 | 5d? | 2018-11-15 08:00 A | 2018-11-21 17:00 A | 98 | 100% |  |  |  | 卢彦谚 | 40h | 40h | 2,600 |  | 2,600 |
| 102 | 3.3.6.2.5 | 课程业务编码 | 3d? | 2018-12-03 08:00 A | 2018-12-05 17:00 A | 98 | 100% | 2018-11-07 16:13 | 2018-11-08 16:13 | 1d? | 卢彦谚 | 24h | 24h | 1,560 | 520 | 1,560 |
| 103 | 3.3.6.2.6 | 课程管理业务编码 | 2d? | 2018-12-06 08:00 A | 2018-12-09 17:00 A | 102 | 100% | 2018-11-08 16:13 | 2018-11-09 16:13 | 1d? | 卢彦谚 | 16h | 16h | 1,040 | 520 | 1,040 |
| 104 | 3.3.6.3 | 数据库搭建 | 5d | 2018-11-18 08:00 A | 2018-11-23 17:00 A | 90SS+6d | 100% | 2018-11-07 16:13 | 2018-11-12 16:13 | 3d | 吴志祥 | 40h | 40h | 2,600 | 1,560 | 2,600 |

| ID | WBS | Task | Type | Duration | Start | Finish | Predecessors | Complete | Baseline start | Baseline finish | Baseline duration | Resources | Work | Actual work | Cost | Baseline cost | Actual cost |
| --- | --- | --- | --- | --- | --- | --- | --- | --- | --- | --- | --- | --- | --- | --- | --- | --- | --- |
| 105 | 3.3.7 | **开发人员测试(初步调试)** |  | 7d | 2018-11-30 08:00 A | 2018-12-10 17:00 A | 89SS | 100% | 2018-10-30 16:13 | 2018-11-09 16:13 | 8d |  | 248h | 248h | 16,120 | 7,800 | 16,120 |
| 106 | 3.3.7.1 | 前端代码测试 |  | 7d | 2018-11-30 08:00 A | 2018-12-10 17:00 A | 90FF | 100% | 2018-10-30 16:13 | 2018-11-02 16:13 | 3d | 谢旻珊; 谢珮爽; 谢哲威 | 168h | 168h | 10,920 | 4,680 | 10,920 |
| 107 | 3.3.7.2 | 后台代码测试 |  | 5d | 2018-12-03 08:00 A | 2018-12-09 17:00 A | 97FF | 100% | 2018-11-06 16:13 | 2018-11-09 16:13 | 3d | 卢彦谚; 吴潘安 | 80h | 80h | 5,200 | 3,120 | 5,200 |
| 108 | 3.3.8 | 开发工作完毕 | milestone | 0d | 2018-12-09 17:00 A | 2018-12-09 17:00 A | 90, 97, 104 | 100% | 2018-11-12 16:13 | 2018-11-12 16:13 | 0d |  |  |  |  |  |  |
| 109 | 3.4 | **测试** |  | 10d | 2018-12-01 08:00 A | 2018-12-15 17:00 A | 81 | 100% | 2018-11-12 16:13 | 2018-11-29 16:13 | 13d |  | 680h | 680h | 44,200 | 27,560 | 44,200 |
| 110 | 3.4.1 | 制定单元测试计划 |  | 0.5d | 2018-12-03 08:00 A | 2018-12-03 12:00 A | 108 | 100% | 2018-11-12 16:13 | 2018-11-13 16:13 | 1d | 卢彦谚 | 4h | 4h | 260 | 520 | 260 |
| 111 | 3.4.2 | 制定整体测试计划 |  | 0.5d | 2018-12-03 08:00 A | 2018-12-03 12:00 A | 110 | 100% | 2018-11-13 16:13 | 2018-11-14 16:13 | 1d | 卢彦谚 | 4h | 4h | 260 | 520 | 260 |
| 112 | 3.4.3 | **单元测试** |  | 6d | 2018-12-01 08:00 A | 2018-12-10 17:00 A | 110FS+2d | 100% | 2018-11-15 16:13 | 2018-11-23 16:13 | 6d |  | 352h | 352h | 22,880 | 16,640 | 22,880 |
| 113 | 3.4.3.1 | **审阅模块化代码** |  | 5d | 2018-12-01 08:00 A | 2018-12-07 17:00 A |  | 100% | 2018-11-15 16:13 | 2018-11-20 16:13 | 3d |  | 80h | 80h | 5,200 | 3,120 | 5,200 |
| 114 | 3.4.3.1.1 | 审阅前端代码 |  | 5d | 2018-12-03 08:00 A | 2018-12-07 17:00 A |  | 100% | 2018-11-15 16:13 | 2018-11-20 16:13 | 3d | 谢旻珊 | 40h | 40h | 2,600 | 1,560 | 2,600 |
| 115 | 3.4.3.1.2 | 审阅后台代码 |  | 5d | 2018-12-01 08:00 A | 2018-12-07 17:00 A | 114SS | 100% | 2018-11-15 16:13 | 2018-11-20 16:13 | 3d | 卢彦谚 | 40h | 40h | 2,600 | 1,560 | 2,600 |
| 116 | 3.4.3.2 | 测试组件模块是否符合产品规范 |  | 5d | 2018-12-03 08:00 A | 2018-12-07 17:00 A | 113SS | 100% | 2018-11-15 16:13 | 2018-11-21 16:13 | 4d | 卢彦谚; 谢旻珊 | 80h | 80h | 5,200 | 4,160 | 5,200 |
| 117 | 3.4.3.3 | 找出不符合规范的异常情况 |  | 5d | 2018-12-03 08:00 A | 2018-12-07 17:00 A | 116SS | 100% | 2018-11-15 16:13 | 2018-11-21 16:13 | 4d | 卢彦谚; 谢旻珊 | 80h | 80h | 5,200 | 4,160 | 5,200 |
| 118 | 3.4.3.4 | 修改代码 |  | 5d | 2018-12-03 08:00 A | 2018-12-07 17:00 A | 117FF | 100% | 2018-11-16 16:13 | 2018-11-21 16:13 | 3d | 卢彦谚; 谢旻珊 | 80h | 80h | 5,200 | 3,120 | 5,200 |
| 119 | 3.4.3.5 | 重新测试经过修改的代码 |  | 2d | 2018-12-06 08:00 A | 2018-12-09 17:00 A | 118 | 100% | 2018-11-21 16:13 | 2018-11-23 16:13 | 2d | 卢彦谚; 谢旻珊 | 32h | 32h | 2,080 | 2,080 | 2,080 |
| 120 | 3.4.3.6 | 单元测试完成 | milestone | 1d | 2018-12-10 08:00 A | 2018-12-10 17:00 A | 119 | 100% | 2018-11-23 16:13 | 2018-11-23 16:13 | 0d |  |  |  |  |  |  |
| 121 | 3.4.4 | **整体测试** |  | 5d | 2018-12-10 08:00 A | 2018-12-15 17:00 A | 112 | 100% | 2018-11-23 16:13 | 2018-11-29 16:13 | 4d |  | 320h | 320h | 20,800 | 9,880 | 20,800 |
| 122 | 3.4.4.1 | 测试模块集成情况 |  | 5d | 2018-12-10 08:00 A | 2018-12-15 17:00 A |  | 100% | 2018-11-23 16:13 | 2018-11-27 16:13 | 2d | 吴潘安; 吴志祥 | 80h | 80h | 5,200 | 2,080 | 5,200 |
| 123 | 3.4.4.2 | 找出不符合规范的异常情况 |  | 5d | 2018-12-10 08:00 A | 2018-12-15 17:00 A | 122SS | 100% | 2018-11-23 16:13 | 2018-11-28 16:13 | 3d | 吴潘安; 吴志祥 | 80h | 80h | 5,200 | 3,120 | 5,200 |
| 124 | 3.4.4.3 | 修改代码 |  | 4d | 2018-12-11 08:00 A | 2018-12-15 17:00 A | 123FF | 100% | 2018-11-23 16:13 | 2018-11-28 16:13 | 3d | 吴潘安; 吴志祥 | 64h | 64h | 4,160 | 3,120 | 4,160 |
| 125 | 3.4.4.4 | 重新测试经过修改的代码 |  | 4d | 2018-12-11 08:00 A | 2018-12-15 17:00 A | 124 | 100% | 2018-11-28 16:13 | 2018-11-29 16:13 | 1d | 吴志祥; 吴潘安; 卢彦谚 | 96h | 96h | 6,240 | 1,560 | 6,240 |
| 126 | 3.4.4.5 | 整体测试完成 | milestone | 0d | 2018-12-15 08:00 A | 2018-12-15 17:00 A | 125 | 100% | 2018-11-29 16:13 | 2018-11-29 16:13 | 0d |  |  |  |  |  |  |
| 127 | 3.5 | **试生产** |  | 15.5d? | 2018-11-26 08:00 A | 2018-12-17 12:00 A | 108 | 100% | 2018-11-12 16:13 | 2018-11-30 16:13 | 14d? |  | 20h | 20h | 1,300 | 780 | 1,300 |
| 128 | 3.5.1 | 确定测试群体 |  | 1d | 2018-11-26 08:00 A | 2018-11-26 17:00 A | 108 | 100% | 2018-11-12 16:13 | 2018-11-13 11:13 | 0.5d | 谢哲威 | 8h | 8h | 520 | 260 | 520 |
| 129 | 3.5.2 | 获得用户反馈 |  | 8h? | 2018-12-14 08:00 A | 2018-12-15 17:00 A | 128, 126 | 100% | 2018-11-29 16:13 | 2018-11-30 11:13 | 4h? | 谢哲威 | 8h | 8h | 520 | 260 | 520 |
| 130 | 3.5.3 | 评估测试信息 |  | 0.5d | 2018-12-15 08:00 A | 2018-12-17 12:00 A | 129 | 100% | 2018-11-30 11:13 | 2018-11-30 16:13 | 0.5d | 谢旻珊 | 4h | 4h | 260 | 260 | 260 |
| 131 | 3.5.4 | 试生产工作完成 | milestone | 0d | 2018-12-16 08:00 A | 2018-12-16 17:00 A | 130 | 100% | 2018-11-30 16:13 | 2018-11-30 16:13 | 0d |  |  |  |  |  |  |

| ID | WBS | Task | Type | Duration | Start | Finish | Predecessors | Complete | Baseline start | Baseline finish | Baseline duration | Resources | Work | Actual work | Cost | Baseline cost | Actual cost |
| --- | --- | --- | --- | --- | --- | --- | --- | --- | --- | --- | --- | --- | --- | --- | --- | --- | --- |
| 132 | 3.6 | **部署** |  | 36d | 2018-10-26 08:00 A | 2018-12-15 17:00 A | 84 | 100% | 2018-10-23 16:13 | 2018-11-15 16:13 | 17d |  | 88h | 88h | 5,720 | 4,160 | 5,720 |
| 133 | 3.6.1 | 确定部署策略 |  | 1d | 2018-10-26 08:00 A | 2018-10-28 17:00 A | 84 | 100% | 2018-10-23 16:13 | 2018-10-24 16:13 | 1d | 吴志祥 | 8h | 8h | 520 | 520 | 520 |
| 134 | 3.6.2 | 确定部署方法 |  | 2d | 2018-10-31 08:00 A | 2018-11-01 17:00 A | 133 | 100% | 2018-10-24 16:13 | 2018-10-25 16:13 | 1d | 吴潘安 | 16h | 16h | 1,040 | 520 | 1,040 |
| 135 | 3.6.3 | 获得部署所需资源 |  | 1d | 2018-11-08 08:00 A | 2018-11-08 17:00 A | 134FS+2d | 100% | 2018-10-29 16:13 | 2018-10-30 16:13 | 1d | 吴志祥 | 8h | 8h | 520 | 520 | 520 |
| 136 | 3.6.4 | 培训技术支持人员 |  | 2d | 2018-11-16 08:00 A | 2018-11-19 17:00 A | 135FS+5d | 100% | 2018-11-06 16:13 | 2018-11-08 16:13 | 2d | 吴志祥 | 16h | 16h | 1,040 | 1,040 | 1,040 |
| 137 | 3.6.5 | 部署软件 |  | 5d | 2018-12-10 08:00 A | 2018-12-15 17:00 A | 136FS+2d | 100% | 2018-11-12 16:13 | 2018-11-15 16:13 | 3d | 吴志祥 | 40h | 40h | 2,600 | 1,560 | 2,600 |
| 138 | 3.6.6 | 部署工作完成 | milestone | 0d | 2018-12-15 17:00 A | 2018-12-15 17:00 A | 137 | 100% | 2018-11-15 16:13 | 2018-11-15 16:13 | 0d |  |  |  |  |  |  |
| 139 | 4 | **监控** |  | 48.25d? | 2018-09-27 08:00 A | 2018-12-04 10:00 A | 1SS | 100% | 2018-09-27 08:00 | 2018-12-04 17:00 | 49d? |  | 103h | 103h | 6,695 | 5,135 | 6,695 |
| 140 | 4.1 | 周会1 | manual | 2h | 2018-09-27 08:00 A | 2018-09-27 10:00 A |  | 100% | 2018-09-27 08:00 | 2018-09-27 10:00 | 2h | 卢彦谚; 吴潘安; 吴志祥; 谢旻珊; 谢珮爽; 谢哲威 | 12h | 12h | 780 | 780 | 780 |
| 141 | 4.2 | 短谈1 | manual | 0.25h | 2018-10-09 08:00 A | 2018-10-09 08:15 A |  | 100% | 2018-10-09 08:00 | 2018-10-09 08:15 | 0.25h | 卢彦谚; 吴潘安; 谢旻珊; 谢珮爽; 谢哲威 | 1.25h | 1.25h | 81.25 | 81.25 | 81.25 |
| 142 | 4.3 | 周会2 | manual | 2h | 2018-10-11 08:00 A | 2018-10-11 10:00 A |  | 100% | 2018-10-11 08:00 | 2018-10-11 10:00 | 2h | 卢彦谚; 吴潘安; 吴志祥; 谢旻珊; 谢珮爽; 谢哲威 | 12h | 12h | 780 | 780 | 780 |
| 143 | 4.4 | 短谈2 | manual | 0.25h | 2018-10-16 08:00 A | 2018-10-16 08:15 A |  | 100% | 2018-10-16 08:00 | 2018-10-16 08:15 | 0.25h | 卢彦谚; 吴潘安; 吴志祥; 谢旻珊; 谢珮爽; 谢哲威 | 1.5h | 1.5h | 97.5 | 97.5 | 97.5 |
| 144 | 4.5 | 周会3 | manual | 2h | 2018-10-18 08:00 A | 2018-10-18 10:00 A |  | 100% | 2018-10-18 08:00 | 2018-10-18 10:00 | 2h | 卢彦谚; 吴潘安; 吴志祥; 谢旻珊; 谢珮爽; 谢哲威 | 12h | 12h | 780 | 780 | 780 |
| 145 | 4.6 | 短谈3 | manual | 0.25h | 2018-10-23 08:00 A | 2018-10-23 08:15 A |  | 100% | 2018-10-23 08:00 | 2018-10-23 08:15 | 0.25h | 卢彦谚; 吴志祥; 谢旻珊; 谢珮爽; 谢哲威 | 1.25h | 1.25h | 81.25 | 81.25 | 81.25 |
| 146 | 4.7 | 周会4 | manual | 2h | 2018-10-25 08:00 A | 2018-10-25 10:00 A |  | 100% | 2018-10-25 08:00 | 2018-10-25 10:00 | 2h | 卢彦谚; 吴潘安; 吴志祥; 谢旻珊; 谢珮爽; 谢哲威 | 12h | 12h | 780 | 780 | 780 |
| 147 | 4.8 | 短谈4 | manual | 0.25h | 2018-10-30 08:00 A | 2018-10-30 08:15 A |  | 100% | 2018-10-30 08:00 | 2018-10-30 08:15 | 0.25h | 卢彦谚; 吴潘安; 吴志祥; 谢旻珊; 谢珮爽; 谢哲威 | 1.5h | 1.5h | 97.5 | 97.5 | 97.5 |
| 148 | 4.9 | 周会5 | manual | 2h | 2018-11-01 08:00 A | 2018-11-01 10:00 A |  | 100% | 2018-11-01 08:00 | 2018-11-01 10:00 | 2h | 卢彦谚; 吴潘安; 吴志祥; 谢旻珊; 谢珮爽; 谢哲威 | 12h | 12h | 780 | 780 | 780 |
| 149 | 4.10 | 短谈5 | manual | 0.25h | 2018-11-06 08:00 A | 2018-11-06 08:15 A |  | 100% | 2018-11-06 08:00 | 2018-11-06 08:15 | 0.25h | 卢彦谚; 吴潘安; 吴志祥; 谢旻珊; 谢珮爽; 谢哲威 | 1.5h | 1.5h | 97.5 | 97.5 | 97.5 |
| 150 | 4.11 | 周会6 | manual | 2h | 2018-11-08 08:00 A | 2018-11-08 10:00 A |  | 100% | 2018-11-08 08:00 | 2018-11-08 10:00 | 2h | 卢彦谚; 吴潘安; 吴志祥; 谢旻珊; 谢珮爽; 谢哲威 | 12h | 12h | 780 | 780 | 780 |
| 151 | 4.12 | 短谈6 | manual | 0.25d? | 2018-11-13 08:00 A | 2018-11-13 10:00 A |  | 100% | 2018-11-13 08:00 | 2018-11-13 17:00 | 0.25h | 卢彦谚; 吴潘安; 吴志祥; 谢旻珊; 谢珮爽; 谢哲威 | 12h | 12h | 780 |  | 780 |
| 152 | 4.13 | 周会7 |  | 2h? | 2018-11-15 08:00 A | 2018-11-15 10:00 A |  | 100% | 2018-11-15 08:00 | 2018-11-15 17:00 | 2h | 卢彦谚; 吴潘安; 吴志祥; 谢旻珊; 谢珮爽; 谢哲威 | 12h | 12h | 780 |  | 780 |
| 153 | 4.14 | 短会7 | manual | 0.25d | 2018-11-20 08:00 A | 2018-11-20 10:00 A |  | 100% | 2018-11-20 08:00 | 2018-11-20 17:00 | 1d? |  |  |  |  |  |  |
| 154 | 4.15 | 周会8 | manual | 0.25d | 2018-11-22 08:00 A | 2018-11-22 10:00 A |  | 100% | 2018-11-22 08:00 | 2018-11-22 17:00 | 1d? |  |  |  |  |  |  |
| 155 | 4.16 | 短会8 | manual | 0.25d | 2018-11-27 08:00 A | 2018-11-27 10:00 A |  | 100% | 2018-11-27 08:00 | 2018-11-27 17:00 | 1d? |  |  |  |  |  |  |
| 156 | 4.17 | 周会9 | manual | 0.25d | 2018-11-29 08:00 A | 2018-11-29 10:00 A |  | 100% | 2018-11-29 08:00 | 2018-11-29 17:00 | 1d? |  |  |  |  |  |  |
| 157 | 4.18 | 短会9 | manual | 0.25d | 2018-12-04 08:00 A | 2018-12-04 10:00 A |  | 100% | 2018-12-04 08:00 | 2018-12-04 17:00 | 1d? |  |  |  |  |  |  |

| ID | WBS | Task | Type | Duration | Start | Finish | Predecessors | Complete | Baseline start | Baseline finish | Baseline duration | Resources | Work | Actual work | Cost | Baseline cost | Actual cost |
| --- | --- | --- | --- | --- | --- | --- | --- | --- | --- | --- | --- | --- | --- | --- | --- | --- | --- |
| 158 | 5 | **收尾** |  | 15.5d? | 2018-11-27 08:00 A | 2018-12-18 12:00 A | 17FS-12d | 100% | 2018-11-12 16:13 | 2018-12-05 11:13 | 16.5d? |  | 48h | 48h | 3,120 | 5,460 | 3,120 |
| 159 | 5.1 | **文档整理** |  | 14.5d? | 2018-11-27 08:00 A | 2018-12-17 12:00 A | 127FS-12d | 100% | 2018-11-12 16:13 | 2018-11-28 16:13 | 12d? |  | 40h | 40h | 2,600 | 4,680 | 2,600 |
| 160 | 5.1.1 | 制定文档整理计划 |  | 0.5d? | 2018-11-27 08:00 A | 2018-11-27 17:00 A | 131 | 100% | 2018-11-12 16:13 | 2018-11-13 11:13 | 0.5d? | 谢哲威 | 4h | 4h | 260 | 260 | 260 |
| 161 | 5.1.2 | 制定用户手册规范 |  | 1d? | 2018-12-11 08:00 A | 2018-12-11 17:00 A |  | 100% | 2018-11-22 16:13 | 2018-11-23 11:13 | 0.5d? | 谢哲威 | 8h | 8h | 520 | 260 | 520 |
| 162 | 5.1.3 | 编写用户手册 |  | 1d | 2018-12-14 08:00 A | 2018-12-15 17:00 A | 161 | 100% | 2018-11-23 11:13 | 2018-11-26 11:13 | 1d | 谢珮爽 | 8h | 8h | 520 | 520 | 520 |
| 163 | 5.1.4 | 审阅所有的用户文档 |  | 2d? | 2018-12-13 08:00 A | 2018-12-15 17:00 A | 162 | 100% | 2018-11-26 11:13 | 2018-11-26 16:13 | 0.5d? | 谢哲威 | 16h | 16h | 1,040 | 260 | 1,040 |
| 164 | 5.1.5 | 根据反馈修改用户文档 |  | 0.5d? | 2018-12-16 08:00 A | 2018-12-17 12:00 A | 163 | 100% | 2018-11-26 16:13 | 2018-11-27 16:13 | 1d? | 谢珮爽 | 4h | 4h | 260 | 520 | 260 |
| 165 | 5.1.6 | 文档整理完成 | milestone | 0d? | 2018-12-17 12:00 A | 2018-12-17 12:00 A | 164 | 100% | 2018-11-27 16:13 | 2018-11-28 16:13 | 1d? |  |  |  |  |  |  |
| 166 | 5.2 | **总结经验教训** |  | 1.5d? | 2018-12-16 08:00 A | 2018-12-18 12:00 A | 159 | 100% | 2018-11-30 16:13 | 2018-12-05 11:13 | 2.5d? |  | 8h | 8h | 520 | 780 | 520 |
| 167 | 5.2.1 | 将经验教训记录存档 |  | 0.5d? | 2018-12-16 08:00 A | 2018-12-17 12:00 A | 165 | 100% | 2018-11-30 16:13 | 2018-12-03 16:13 | 1d? | 谢哲威 | 4h | 4h | 260 | 520 | 260 |
| 168 | 5.2.2 | 分发给工作组成员 |  | 0.5d? | 2018-12-16 08:00 A | 2018-12-17 12:00 A | 167 | 100% | 2018-12-03 16:13 | 2018-12-04 11:13 | 0.5d? | 谢哲威 | 4h | 4h | 260 | 260 | 260 |
| 169 | 5.2.3 | 回顾完成 | milestone | 1d? | 2018-12-17 13:00 A | 2018-12-18 12:00 A | 168 | 100% | 2018-12-04 11:13 | 2018-12-05 11:13 | 1d? |  |  |  |  |  |  |
